# Spartanburg - Corridor Improvements - S-47_Update30_rev2

Schedule from Primavera P6, 2022-06-16 to 2026-09-03, data date 2025-07-01, A marks actual dates.

## Calendars

- 5 Day Work Week w/ Holidays: Mon-Fri 08:00-11:59, 13:00-16:59; Sat-Sun off. Exceptions (off unless hours are given): 2022-07-01, 2022-07-04 to 2022-07-05, 2022-09-02, 2022-09-05, 2022-11-23 to 2022-11-25, 2022-12-23, 2022-12-26 to 2022-12-30, 2023-01-02 to 2023-01-03, 2023-04-07, 2023-04-10, 2023-07-03 to 2023-07-05, 2023-09-01, 2023-09-04, 2023-11-23 to 2023-11-24, 2023-12-22, 2023-12-25 to 2023-12-29, 2024-01-01 to 2024-01-03, 2024-03-22, 2024-03-25, 2024-05-24, 2024-05-27, 2024-07-03 to 2024-07-05, 2024-08-30, 2024-09-02, 2024-11-28 to 2024-11-29, 2024-12-20, 2024-12-23 to 2024-12-27, 2024-12-30 to 2025-01-03, 2025-04-18, 2025-04-21, 2025-05-23, 2025-05-26, 2025-07-02 to 2025-07-04, 2025-08-29, 2025-09-01, 2025-11-26 to 2025-11-28, 2025-12-23 to 2025-12-26, 2025-12-29 to 2026-01-02, 2026-04-03, 2026-04-06, 2026-05-22, 2026-05-25, 2026-06-04 to 2026-06-05 08:00-15:59, 2026-07-03, 2026-07-06.
- 7 Day Work Week: Mon-Sun 08:00-15:59.
- SCDOT- Asphalt/Winter: Mon-Fri 08:00-11:59, 13:00-16:59; Sat-Sun off. Exceptions (off unless hours are given): 2022-09-02, 2022-09-05, 2022-11-22 08:00-15:59, 2022-11-23 to 2022-11-25, 2022-11-28 to 2022-11-30 08:00-15:59, 2022-12-01 to 2022-12-02, 2022-12-05 to 2022-12-09, 2022-12-12 to 2022-12-16, 2022-12-19 to 2022-12-23, 2022-12-26 to 2022-12-30, 2023-01-02 to 2023-01-06, 2023-01-09 to 2023-01-13, 2023-01-16 to 2023-01-20, 2023-01-23 to 2023-01-27, 2023-01-30 to 2023-02-03, 2023-02-06 to 2023-02-10, 2023-02-13 to 2023-02-17, 2023-02-20 to 2023-02-24, 2023-02-27 to 2023-02-28, 2023-04-07, 2023-04-10, 2023-07-03 to 2023-07-05, 2023-09-01, 2023-09-04, 2023-11-23 to 2023-11-24, 2023-12-01, 2023-12-04 to 2023-12-08, 2023-12-11 to 2023-12-15, 2023-12-18 to 2023-12-22, 2023-12-25 to 2023-12-29, 2024-01-01 to 2024-01-05, 2024-01-08 to 2024-01-12, 2024-01-15 to 2024-01-19, 2024-01-22 to 2024-01-26, 2024-01-29 to 2024-02-02, 2024-02-05 to 2024-02-09, 2024-02-12 to 2024-02-16, 2024-02-19 to 2024-02-23, 2024-02-26 to 2024-02-29, 2024-03-22, 2024-03-25, 2024-05-24, 2024-05-27, 2024-07-03 to 2024-07-05, 2024-08-30, 2024-09-02, 2024-11-28 to 2024-11-29, 2024-12-02 to 2024-12-06, 2024-12-09 to 2024-12-13, 2024-12-16 to 2024-12-20, 2024-12-23 to 2024-12-27, 2024-12-30 to 2025-01-03, 2025-01-06 to 2025-01-10, 2025-01-13 to 2025-01-17, 2025-01-20 to 2025-01-24, 2025-01-27 to 2025-01-31, 2025-02-03 to 2025-02-07, 2025-02-10 to 2025-02-14, 2025-02-17 to 2025-02-21, 2025-02-24 to 2025-02-28, 2025-04-18, 2025-04-21, 2025-05-23, 2025-05-26, 2025-07-02 to 2025-07-04, 2025-08-29, 2025-09-01, 2025-11-26 to 2025-11-28, 2025-12-01 to 2025-12-05, 2025-12-08 to 2025-12-12, 2025-12-15 to 2025-12-19, 2025-12-22 to 2025-12-26, 2025-12-29 to 2026-01-02, 2026-01-05 to 2026-01-09, 2026-01-12 to 2026-01-16, 2026-01-19 to 2026-01-23, 2026-01-26 to 2026-01-30, 2026-02-02 to 2026-02-06, 2026-02-09 to 2026-02-13, 2026-02-16 to 2026-02-20, 2026-02-23 to 2026-02-27, 2026-04-03, 2026-04-06, 2026-05-22, 2026-05-25, 2026-07-03, 2026-07-06.
- SCDOT- Thermo Restrictions: Mon-Fri 08:00-11:59, 13:00-16:59; Sat-Sun off. Exceptions (off unless hours are given): 2022-09-02, 2022-09-05, 2022-11-23 to 2022-11-25, 2022-12-01 to 2022-12-02 08:00-15:59, 2022-12-05 to 2022-12-09 08:00-15:59, 2022-12-12 to 2022-12-14 08:00-15:59, 2022-12-15 to 2022-12-16, 2022-12-19 to 2022-12-23, 2022-12-26 to 2022-12-30, 2023-01-02 to 2023-01-06, 2023-01-09 to 2023-01-13, 2023-01-16 to 2023-01-20, 2023-01-23 to 2023-01-27, 2023-01-30 to 2023-02-03, 2023-02-06 to 2023-02-10, 2023-02-13 to 2023-02-17, 2023-02-20 to 2023-02-24, 2023-02-27 to 2023-03-03, 2023-03-06 to 2023-03-10, 2023-03-13 to 2023-03-15, 2023-04-07, 2023-04-10, 2023-07-03 to 2023-07-05, 2023-09-01, 2023-09-04, 2023-11-23 to 2023-11-24, 2023-12-15, 2023-12-18 to 2023-12-22, 2023-12-25 to 2023-12-29, 2024-01-01 to 2024-01-05, 2024-01-08 to 2024-01-12, 2024-01-15 to 2024-01-19, 2024-01-22 to 2024-01-26, 2024-01-29 to 2024-02-02, 2024-02-05 to 2024-02-09, 2024-02-12 to 2024-02-16, 2024-02-19 to 2024-02-23, 2024-02-26 to 2024-03-01, 2024-03-04 to 2024-03-08, 2024-03-11 to 2024-03-15, 2024-03-22, 2024-03-25, 2024-05-24, 2024-05-27, 2024-07-03 to 2024-07-05, 2024-08-30, 2024-09-02, 2024-11-28 to 2024-11-29, 2024-12-16 to 2024-12-20, 2024-12-23 to 2024-12-27, 2024-12-30 to 2025-01-03, 2025-01-06 to 2025-01-10, 2025-01-13 to 2025-01-17, 2025-01-20 to 2025-01-24, 2025-01-27 to 2025-01-31, 2025-02-03 to 2025-02-07, 2025-02-10 to 2025-02-14, 2025-02-17 to 2025-02-21, 2025-02-24 to 2025-02-28, 2025-03-03 to 2025-03-07, 2025-03-10 to 2025-03-14, 2025-04-18, 2025-04-21, 2025-05-23, 2025-05-26, 2025-07-02 to 2025-07-04, 2025-08-29, 2025-09-01, 2025-11-26 to 2025-11-28, 2025-12-15 to 2025-12-19, 2025-12-22 to 2025-12-26, 2025-12-29 to 2026-01-02, 2026-01-05 to 2026-01-09, 2026-01-12 to 2026-01-16, 2026-01-19 to 2026-01-23, 2026-01-26 to 2026-01-30, 2026-02-02 to 2026-02-06, 2026-02-09 to 2026-02-13, 2026-02-16 to 2026-02-20, 2026-02-23 to 2026-02-27, 2026-03-02 to 2026-03-06, 2026-03-09 to 2026-03-13, 2026-04-03, 2026-04-06, 2026-05-22, 2026-05-25, 2026-07-03, 2026-07-06.

## Schedule

| ID | WBS | Activity | Type | Duration | Start | Finish | Predecessors | Complete | Remaining | Planned start | Planned finish | Constraint | Calendar | Cost | Actual cost |
| --- | --- | --- | --- | --- | --- | --- | --- | --- | --- | --- | --- | --- | --- | --- | --- |
|  | 1 | **General** |  |  | 2022-06-16 | 2026-09-03 |  |  |  |  |  |  |  |  |  |
| A1000 |  | Award Date | milestone | 0d | 2022-06-16 A | 2022-06-16 A |  | 100% |  |  |  |  |  |  |  |
| A1010 |  | Contract Execution | milestone | 0d | 2022-06-28 A | 2022-06-28 A | A1000 | 100% |  |  |  | start on 2022-06-28 |  |  |  |
| A1030 |  | Baseline CPM | milestone | 0d | 2022-10-03 A | 2022-10-03 A | A1020 | 100% |  |  |  | start on or after 2022-10-03 |  | 3,900 | 3,900 |
| A1020 |  | Notice to Proceed | milestone | 0d | 2022-10-11 A | 2022-10-11 A | A1010 | 100% |  | 2022-10-03 | 2022-10-03 | start on 2022-10-03 |  |  |  |
| A1040 |  | Work Begins | milestone | 0d | 2022-10-13 A | 2022-10-13 A | A1030 | 100% |  | 2022-10-10 | 2022-10-10 | start on or after 2022-10-10 |  |  |  |
| A1050 |  | Mobilization1 / Bonds & Insurance | milestone | 0d | 2022-10-13 A | 2022-10-13 A | A1040 | 100% |  | 2022-10-10 | 2022-10-10 |  | 7 Day Work Week | 1,365,000 | 1,365,000 |
| A1080 |  | Construction Stakes, Lines & Grades | level of effort | 634d | 2022-10-13 A | 2026-09-02 | A1040 SS | 81% | 284d | 2022-10-10 | 2025-05-29 |  |  | 179,989.3 | 145,589.3 |
| A1090 |  | Traffic Control | level of effort | 634d | 2022-10-13 A | 2026-09-02 | A1040 SS | 75% | 284d | 2022-10-10 | 2025-05-29 |  |  | 1,862,000 | 1,440,500 |
| A1100 |  | Erosion Control | level of effort | 634d | 2022-10-13 A | 2026-09-02 | A1040 SS | 50% | 284d | 2022-10-10 | 2025-05-29 |  |  | 165,660.83 | 139,423.7 |
| A1160 |  | On The Job Training | level of effort | 634d | 2022-10-13 A | 2026-09-02 | A1040 SS |  | 284d | 2022-10-10 | 2025-05-29 |  |  | 2,496 |  |
| A1070 |  | Install Temporary & Permanent Signs | level of effort | 5d | 2022-10-21 A | 2026-09-02 | S1.1005 SS | 60% | 284d | 2025-05-20 | 2025-05-28 |  |  | 55,296.85 | 39,434.4 |
| A1060 |  | Mobilization 2 | milestone | 0d | 2022-11-12 A | 2022-11-12 A | A1050 FS+30d | 100% |  |  |  |  | 7 Day Work Week | 880,000 | 880,000 |
| A1061 |  | Mobilization 3 - SUB | milestone | 0d | 2022-12-12 A | 2022-12-12 A | A1060 FS+30d | 100% |  |  |  |  |  | 280,000 | 280,000 |
| A1062 |  | Mobilization 4 - SUB | milestone | 0d | 2023-01-31 A | 2023-01-31 A | A1061 FS+30d | 100% |  | 2023-02-01 | 2023-02-01 |  |  | 280,000 | 280,000 |
| S1.1015.2 |  | Utility Window - 9 Month Window | level of effort | 274d | 2023-04-19 A | 2024-01-17 A | S1.1015.1 SS+14d | 100% |  | 2023-07-13 | 2024-04-11 |  | 7 Day Work Week |  |  |
| A1150 |  | Renew Liability Insurance Prior to 6/2/2023 | milestone | 0d | 2023-06-02 A | 2023-06-02 A |  | 100% |  | 2023-07-01 | 2023-07-01 | finish on 2023-06-02 | 7 Day Work Week |  |  |
| A1151 |  | Renew Liability Insurance Prior to 6/2/2024 | milestone | 0d | 2024-06-02 A | 2024-06-02 A |  | 100% |  | 2024-08-01 | 2024-08-01 | finish on 2024-06-03 | 7 Day Work Week |  |  |
| A1152 |  | Renew Liability Insurance Prior to 6/2/2025 | milestone | 0d | 2025-07-01 | 2025-07-01 |  |  |  |  |  | finish on 2025-06-02 | 7 Day Work Week |  |  |
| A1170 |  | Start of Paving | milestone | 0d | 2025-07-14 | 2025-07-14 | S1.1220 SS |  |  |  |  |  |  |  |  |
| A1110 |  | Right of Way Markers & Plat |  | 5d | 2025-09-23 | 2025-09-29 | S4.1110 |  |  |  |  |  |  | 19,250 |  |
| A1154 |  | Renew Liability Insurance Prior to 6/2/2026 | milestone | 0d | 2026-06-02 | 2026-06-02 |  |  |  |  |  | finish on 2026-06-02 |  |  |  |
| A1153 |  | Renew Liability Insurance: Until End of Project 6/2/2027 | milestone | 0d | 2026-09-02 | 2026-09-02 |  |  |  |  |  | as late as possible |  |  |  |
| A1120 |  | Substantial Work Complete | milestone | 0d | 2026-09-03 | 2026-09-03 | A1080 FF, A1090 FF, A1100 FF, A1110, S4.1110, A1160 FF, A1070 FF, A1170, S5.1170, S3.1170, A1062, S5.1175, S4.1015, S5.1075, S5.1045, S5.1040, S5.1420 FF |  |  |  |  | finish on or before 2025-05-31 | 7 Day Work Week |  |  |
| A1130 |  | As Built CPM Acceptance | milestone | 0d | 2026-09-03 | 2026-09-03 | A1120 |  |  |  |  |  |  | 2,600 |  |
| A1140 |  | Contract Completion: 5/31/2025 | milestone | 0d | 2026-09-03 | 2026-09-03 | A1130 |  |  |  |  |  | 7 Day Work Week |  |  |

Notes:
- A1030: Expenses: (New Expense Item)
- A1050: Expenses: (New Expense Item); (New Expense Item)1; (New Expense Item)2
- A1080: Expenses: (New Expense Item); (New Expense Item)1; CO #2- additional C&G; CO#3 - addistional C&G
- A1090: Expenses: (New Expense Item); (New Expense Item)1; (New Expense Item)2
- A1100: Expenses: (New Expense Item)30; (New Expense Item)1; (New Expense Item)3; (New Expense Item)15
- A1160: Expenses: (New Expense Item)
- A1070: Expenses: (New Expense Item); (New Expense Item)1; (New Expense Item)2; (New Expense Item)11; (New Expense Item)3; (New Expense Item)21; (New Expense Item)71; (New Expense Item)91; (New Expense Item)4; (New Expense Item)5; (New Expense Item)6; (New Expense Item)7; (New Expense Item)8; (New Expense Item)9; 6021115 - Temp Const Signs - Barricade Mount
- A1060: Expenses: (New Expense Item); (New Expense Item)2
- A1061: Expenses: (New Expense Item)
- A1062: Expenses: (New Expense Item)
- A1110: Expenses: (New Expense Item); (New Expense Item)1
- A1130: Expenses: (New Expense Item)

| ID | WBS | Activity | Type | Duration | Start | Finish | Predecessors | Complete | Planned start | Planned finish | Cost | Actual cost |
| --- | --- | --- | --- | --- | --- | --- | --- | --- | --- | --- | --- | --- |
|  | 2 | **Roadway** |  |  | 2022-10-21 | 2026-09-02 |  |  |  |  |  |  |
|  | 1 | **Stage 1** |  |  | 2022-10-21 | 2026-07-31 |  |  |  |  |  |  |
| S1.1005 |  | Survey/ Layout for Stage 1 |  | 3d | 2022-10-21 A | 2023-01-06 A | A1040 SS | 100% | 2022-10-10 | 2022-10-12 | 111,474.05 | 115,118.35 |
| S1.1015 |  | Clearing and Grubbing |  | 28d | 2022-11-09 A | 2022-11-10 A | S1.1010 SS, S1.1005 | 100% | 2022-11-11 | 2023-01-04 | 2,104,600 | 2,052,543.75 |
| S1.1010 |  | Erosion Control for Stage 1 |  | 5d | 2022-11-14 A | 2022-12-02 A | S1.1005 SS | 100% | 2022-11-04 | 2022-11-10 | 108,462.71 | 133,692.83 |
| S1.1255 |  | Rip Rap Outlet Protection STA. 119+40 LT. (211 TONS) |  | 1d | 2022-12-20 A | 2022-12-21 A | S1.1015 | 100% | 2023-08-09 | 2023-08-09 | 5,195.22 | 14,163.21 |
| S1.1245 |  | Storm Drainage NP 201,202,203,204, STA. 118+39 LT.- 125+50 RT. |  | 10d | 2023-03-28 A | 2023-04-04 A | S1.1255 | 100% | 2023-09-25 | 2023-10-06 | 400,251.9 | 188,478.45 |
| S1.1015.1 |  | Notify SCDOT of 9-Month Utility Window | milestone | 0d | 2023-03-29 A | 2023-03-29 A | S1.1010, S1.1015 | 100% | 2023-04-03 | 2023-04-03 |  |  |
| S1.1250 |  | Construct CB 201, 202, 203, 204, DI 208 STA. 118+39 RT.- 125+50 RT. |  | 5d | 2023-03-31 A | 2023-04-03 A | S1.1245 SS | 100% | 2023-10-11 | 2023-10-17 | 108,456.5 | 56,169.1 |
| S1.1022 |  | Moving Items 16-17 |  | 5d | 2023-04-09 A | 2023-04-21 A | S1.1250 SS | 100% | 2023-04-24 | 2023-04-28 | 1,000 | 1,000 |
| S1.1016 |  | Moving Item 1-9, 11-13 |  | 4d | 2023-04-17 A | 2023-04-21 A | S1.1015, S1.1015.1 | 100% | 2023-04-03 | 2023-04-06 | 20,791 | 20,791 |
| S1.1017 |  | Moving Item 14-27 |  | 5d | 2023-04-17 A | 2023-04-21 A | S1.1016 | 100% | 2023-04-11 | 2023-04-17 | 49,235 | 49,235 |
| S1.1021 |  | Moving Items 7 |  | 2d | 2023-04-17 A | 2023-04-21 A | S1.1022 SS | 100% | 2023-04-20 | 2023-04-21 | 14,250 | 14,250 |
| S1.1024 |  | Moving Items 36-38, 42-43 |  | 10d | 2023-04-17 A | 2023-04-21 A | S1.1021 | 100% | 2023-05-03 | 2023-05-16 | 8,245 | 8,245 |
| S1.1185 |  | Demo Existing Brick Wall STA. 107+55 RT- 108+41 RT. |  | 2d | 2023-04-27 A | 2023-04-28 A | S1.1017 | 100% | 2023-11-02 | 2023-11-03 | 10,726.62 | 5,740 |
| S1.1247 |  | Storm Drainage CB 200, NP 205, 206, 207, 208 |  | 5d | 2023-06-05 A | 2023-07-07 A | S1.1245 | 100% | 2024-10-11 | 2024-10-17 |  |  |
| S1.1251 |  | Construct CB 200, 205, 206, 207 |  | 5d | 2023-06-06 A | 2023-07-07 A | S1.1247 | 100% | 2024-10-18 | 2024-10-24 |  |  |
| S1.1024.1 |  | 56 Day Shut Down - Finish Stage 1 |  | 56d | 2023-10-16 A | 2023-12-07 A | S1.1024, S1.1115 | 100% | 2024-01-04 | 2024-03-21 |  |  |
| S1.1029 |  | Utility Issue: Union Street Utility Pole |  | 20d | 2023-10-16 A | 2024-11-29 A | S1.1235 | 100% | 2025-02-03 | 2025-02-28 |  |  |
| S1.1045 |  | Storm Drainage OP 104, NP 105, & NP 106 Sta. 102+35 LT-102+47 RT |  | 2d | 2023-10-17 A | 2023-10-21 A | S1.1185 | 100% | 2023-10-27 | 2023-10-30 | 44,709.75 | 31,248.75 |
| S1.1055 |  | Pavement Removal STA. 100+41 LT- 102+74 LT |  | 1d | 2023-10-18 A | 2023-10-20 A | S1.1045 | 100% | 2023-11-15 | 2023-11-15 | 12,203.45 | 18,502.66 |
| S1.1060 |  | Existing Sidewalk/Curb and Gutter Removal STA. 100+30 LT/RT-102+45 LT & 102+60 RT |  | 2d | 2023-10-18 A | 2023-10-18 A | S1.1055 | 100% | 2023-11-16 | 2023-11-17 | 7,560 | 12,442.5 |
| S1.1085 |  | Rip Rap Outlet Protection STA. 103+50 LT |  | 1d | 2023-10-18 A | 2023-10-18 A | S1.1060 SS | 100% | 2023-12-11 | 2023-12-11 | 20,551.04 | 4,437.59 |
| S1.1285 |  | Backfill Mow Strip/Shared Use Path STA. 113+54 LT.- 11+02 LT. |  | 4d | 2023-10-18 A | 2023-10-18 A | S1.1045 SS | 100% | 2023-11-09 | 2023-11-14 | 52,111.8 | 39,379.86 |
| S1.1130 |  | Existing Sidewalk/Curb and Gutter Removal STA. 104+50 LT- 111+85 LT |  | 4d | 2023-10-19 A | 2023-10-19 A | S1.1285 | 100% | 2024-02-01 | 2024-02-06 | 7,560 | 3,332.7 |
| S1.1090 |  | Storm Drainage OP 110, NP 111, 112, & 113 STA. 105+04 RT-106+71 RT |  | 6d | 2023-10-24 A | 2023-11-04 A | S1.1085 | 100% | 2023-12-12 | 2023-12-19 | 44,709.75 | 20,191.5 |
| S1.1095 |  | Construct CB 111, 112, 113, & JB 110 STA. 105+04 RT- 106+71 RT |  | 5d | 2023-10-24 A | 2023-11-04 A | S1.1090 | 100% | 2023-12-20 | 2024-01-08 | 241,934.4 | 262,984.24 |
| S1.1110 |  | Rip Rap Outlet Protection STA. 106+00 LT |  | 1d | 2023-10-25 A | 2023-10-25 A | S1.1130 | 100% | 2024-01-24 | 2024-01-24 | 26,637.54 | 20,936.35 |
| S1.1025 |  | Removal and Disposal of Existing CD (JB 100) STA. 100+41 RT |  | 2d | 2023-11-03 A | 2023-11-04 A | S1.1024, S1.1185 | 100% | 2023-11-15 | 2023-11-16 | 10,290 | 3,272.5 |
| S1.1100 |  | Storm Drainage NP 122, 123, 124, & 125 STA. 108+05 RT- 109+18 LT |  | 4d | 2023-11-07 A | 2023-11-21 A | S1.1095 | 100% | 2024-01-09 | 2024-01-12 | 44,709.75 | 26,056.65 |
| S1.1115 |  | Pavement Removal STA. 104+50 LT- 111+85 LT |  | 3d | 2023-11-10 A | 2023-11-10 A | S1.1110 | 100% | 2024-01-25 | 2024-01-29 | 91,008.75 | 165,835.66 |
| S1.1105 |  | Construct CB 122, 123, 124, 125 & JB 121 STA. 108+05 RT- 109+18 LT |  | 4d | 2023-12-06 A | 2024-01-23 A | S1.1115 | 100% | 2023-12-06 | 2023-12-11 | 30,734.5 | 11,351.2 |
| S1.1190 |  | Unclassified Excavation Int. Ashbury Ct. STA. 107+65 RT |  | 2d | 2023-12-14 A | 2023-12-18 A | S1.1100, S1.1024.1 | 100% | 2024-01-19 | 2024-01-22 | 64,213.5 | 156,841.14 |
| S1.1065 |  | Curb and Gutter STA. 100+30- 102+45 LT & 102+60 RT |  | 4d | 2023-12-19 A | 2023-12-20 A | S1.1060 | 100% | 2023-12-01 | 2023-12-06 | 48,075 | 23,150 |
| S1.1135 |  | Curb and Gutter STA. 104+50- 307+07 LT |  | 3d | 2023-12-20 A | 2023-12-22 A | S1.1130 | 100% | 2024-01-04 | 2024-01-08 | 48,075 | 30,587.5 |
| S1.1170 |  | Curb and Gutter 103+45 RT- 107+30 RT |  | 1d | 2023-12-20 A | 2023-12-22 A | S1.1190 | 100% | 2024-02-02 | 2024-02-02 | 48,075 | 47,917.5 |
| S1.1200 |  | Curb and Gutter STA. 107+49 RT.- 304+68 LT. |  | 4d | 2024-01-03 A | 2024-01-05 A | S1.1170 | 100% | 2024-01-08 | 2024-01-11 | 48,075 | 20,512.5 |
| S1.1240 |  | Convert Existing Type 17 to Junction Box STA. 115+00 RT. |  | 2d | 2024-01-05 A | 2024-01-05 A | S1.1235 | 100% | 2024-09-20 | 2024-09-23 | 8,250 |  |
| S1.1050 |  | Rip Rap Outlet protection STA. 102+35 LT |  | 1d | 2024-03-08 A | 2024-03-08 A | S1.1045 | 100% | 2024-03-15 | 2024-03-15 | 31,576.66 | 16,871.3 |
| S1.1080 |  | Sidewalk Construction STA. 100+30 LT/RT-102+45 LT & 102+60 RT |  | 4d | 2024-03-27 A | 2024-03-27 A | S1.1050 | 100% | 2024-03-18 | 2024-03-21 | 20,154.69 | 17,075.18 |
| S1.1070 |  | Concrete Driveway STA. 101+40 LT- 101+83 LT. |  | 1d | 2024-07-29 A | 2024-07-30 A | S1.1065, S1.1105 SS | 100% | 2024-08-01 | 2024-08-01 | 79,260 | 50,459.2 |
| S1.1210 |  | Pedestrian Ramps STA. 113+00 RT |  | 2d | 2024-08-13 A | 2024-08-14 A | S1.1070 | 100% | 2024-08-07 | 2024-08-08 | 98,750 | 56,649.25 |
| S1.1120 |  | Storm Drainage NP 129 STA. 111+68 LT |  | 1d | 2024-08-19 A | 2024-08-20 A | S1.1115, S1.1105 SS | 100% | 2024-08-01 | 2024-08-01 | 44,709.75 | 21,633.75 |
| S1.1125 |  | Construct CB 129 & JB 128 STA. 111+68 LT |  | 1d | 2024-08-21 A | 2024-08-22 A | S1.1120 | 100% | 2024-09-06 | 2024-09-06 | 12,874.25 | 13,670.8 |
| S1.1215 |  | Concrete Sidewalk 107+49 RT.- 304+68 LT. |  | 4d | 2024-08-23 A | 2024-08-23 A | S1.1210 | 100% | 2024-08-09 | 2024-08-14 | 55,071 | 119,394.4 |
| S1.1140 |  | Concrete Driveway STA. 109+50 LT & 110+80 LT |  | 2d | 2024-08-26 A | 2024-08-27 A | S1.1135, S1.1105 | 100% | 2024-08-01 | 2024-08-02 | 29,260 | 17,135.8 |
| S1.1175 |  | Concrete Driveways STA. 104+20 RT, 106+26 RT |  | 1d | 2024-08-28 A | 2024-08-29 A | S1.1170 | 100% | 2024-09-30 | 2024-09-30 | 29,260 | 2,376 |
| S1.1180 |  | Concrete Sidewalk 103+45 RT- 107+30 RT |  | 4d | 2024-08-29 A | 2024-08-30 A | S1.1175 | 100% | 2024-10-01 | 2024-10-04 | 16,758 | 7,847.28 |
| S1.1235 |  | Storm Drainage NP 133 STA. 115+00 RT- 115+13 RT. |  | 1d | 2024-09-05 A | 2024-09-06 A | S1.1170 | 100% | 2024-03-05 | 2024-03-05 | 44,709.75 | 26,152.8 |
| S1.1295 |  | Existing Sidewalk/ Curb and Gutter Removal STA. 115+95 RT.- 120+48 RT. |  | 2d | 2024-09-05 A | 2024-09-06 A | S1.1180 | 100% | 2024-11-01 | 2024-11-04 | 7,560 | 1,033.2 |
| S1.1205 |  | Concrete Driveway STA. 110+95 RT |  | 2d | 2024-09-09 A | 2024-09-10 A | S1.1200 | 100% | 2024-09-05 | 2024-09-06 | 29,260 | 5,223.9 |
| S1.1260 |  | Pavement Removal 113+54 LT- 11+02 LT (AVONDALE DR.) |  | 3d | 2024-09-23 A | 2024-09-24 A | S1.1017, S1.1250, S1.1025, S1.1105 SS | 100% | 2024-09-03 | 2024-09-05 | 12,203.45 | 219.75 |
| S1.1265 |  | Existing Sidewalk/ Curb and Gutter Removal STA. 113+54 LT-11+02 LT. |  | 4d | 2024-09-24 A | 2024-09-24 A | S1.1260, S1.1205 | 100% | 2024-09-09 | 2024-09-12 | 7,560 | 1,726.2 |
| S1.1310 |  | Unclassified Excavation 120+50RT- 123+00 RT. |  | 2d | 2024-12-07 A | 2024-12-08 A | S1.1265 | 100% | 2024-12-10 | 2024-12-11 | 72,706.55 | 4,592.8 |
| S1.1315 |  | Fine Grading 120+00 RT.- 123+00 RT. |  | 2d | 2024-12-08 A | 2024-12-09 A | S1.1310 | 100% | 2024-12-12 | 2024-12-13 | 13,138.85 | 2,350 |
| S1.1320 |  | Curb and Gutter 120+48 RT- 123+00 RT |  | 1d | 2024-12-09 A | 2024-12-13 A | S1.1315 | 100% | 2024-12-16 | 2024-12-16 | 48,075 | 14,975 |
| S1.1325 |  | Concrete Driveway STA. 116+70 RT., 117+20 RT., 118+35 RT., 119+00 RT., 120+30 RT. |  | 3d | 2024-12-10 A | 2024-12-13 A | S1.1320 | 100% | 2024-12-17 | 2024-12-19 | 29,370 | 13,959 |
| S1.1195 |  | Construct 12" Reinforced Brickwall STA. 11+45 RT.- 108+41 RT. |  | 2d | 2025-02-27 A | 2025-03-11 A | S1.1190, S1.1105 SS, S1.1029 | 100% | 2025-03-03 | 2025-03-04 | 28,000 | 29,620 |
| S1.1275 |  | Concrete Driveway 114+75 LT., 115+60 LT., 116+65 LT., 118+05 LT. |  | 3d | 2025-02-28 A | 2025-03-17 A | S1.1325 | 100% | 2025-05-21 | 2025-05-27 | 29,370 | 2,272.6 |
| S1.1018 |  | Moving Item: 15, 16, 19, 20, 24, 25, 27 |  | 5d | 2025-03-10 A | 2025-03-13 A | S1.1017, S1.1250, S1.1125 | 100% | 2025-03-03 | 2025-03-07 | 34,375 |  |
| S1.1023 |  | Moving Items 21-22 |  | 2d | 2025-03-10 A | 2025-03-13 A | S1.1022, S1.1250, S1.1260 | 100% | 2025-03-03 | 2025-03-04 | 23,470 |  |
| S1.1290 |  | Unclassified Excavation Int. US 176 STA. 303+00 RT.- 115+70 RT. |  | 9d | 2025-03-12 A | 2025-03-14 A | S1.1195 | 100% | 2025-04-09 | 2025-04-23 | 59,567.7 | 2,224.91 |
| S1.1165 |  | Existing Sidewalk/ Curb and Gutter Removal STA. 103+45 RT- 304+68 LT |  | 1d | 2025-03-14 A | 2025-03-14 A | S1.1290 | 100% | 2025-03-27 | 2025-03-27 | 7,560 | 611.1 |
| S1.1270 |  | Curb and Gutter STA. 113+54 LT.- 11+02 LT. |  | 4d | 2025-03-17 A | 2025-03-20 A | S1.1265 | 100% | 2025-04-01 | 2025-04-04 | 54,825 | 7,600 |
| S1.1300 |  | Fine Grading STA. 303+00 RT.- 115+70 RT. |  | 3d | 2025-04-01 A | 2025-04-04 A | S1.1295, S1.1290 | 100% | 2025-04-30 | 2025-05-02 | 7,050 | 2,350 |
| S1.1305 |  | Curb and Gutter 303+00 RT.-120+48 RT. |  | 2d | 2025-04-01 A | 2025-04-04 A | S1.1270 | 100% | 2025-05-12 | 2025-05-13 | 48,075 | 1,100 |
| S1.1330 |  | HMA Base Course Type A 119+57 RT- 123+00 RT |  | 1d | 2025-04-08 A | 2025-04-08 A | S1.1305 | 100% | 2025-05-14 | 2025-05-14 | 65,415 | 56,298.79 |
| S1.1335 |  | HMA Intermediate Course Type B 119+57 RT.- 123+00 RT. |  | 1d | 2025-04-09 A | 2025-04-09 A | S1.1330 | 100% | 2025-05-15 | 2025-05-15 | 65,415 | 18,375 |
| S1.1020 |  | Moving Item (GAS STA. SIGN @ S-47 & 176) |  | 2d | 2025-07-01 | 2025-07-07 | S1.1017, S1.1021, S1.1018 |  |  |  |  |  |
| S1.1075 |  | Pedestrian Ramps STA. 100+34 LT & 100+70 RT. |  | 4d | 2025-07-08 | 2025-07-11 | S1.1070, S1.1325, S1.1020 |  |  |  | 57,669.9 |  |

Notes:
- S1.1005: Expenses: (New Expense Item)1; (New Expense Item)31; (New Expense Item)51; (New Expense Item)61; (New Expense Item)81; (New Expense Item); CO #4 .1
- S1.1015: Expenses: NO. 019; NO. 020; NO. 023; (New Expense Item); (New Expense Item)1; NO.024; NO.025; NO.033; (New Expense Item)4
- S1.1010: Expenses: (New Expense Item); (New Expense Item)2; (New Expense Item)3; (New Expense Item)4; (New Expense Item)14; (New Expense Item)16; (New Expense Item)17; (New Expense Item)19; CO #1; CO #1 .
- S1.1255: Expenses: (New Expense Item)2; (New Expense Item); (New Expense Item)1
- S1.1245: Expenses: (New Expense Item)1; (New Expense Item); (New Expense Item)3; (New Expense Item)2
- S1.1250: Expenses: (New Expense Item)6; (New Expense Item); (New Expense Item)1; 8990786 - Temp Shoring For Drainage Structures; (New Expense Item)2; (New Expense Item)3; (New Expense Item)4; (New Expense Item)5
- S1.1022: Expenses: NO. 016; NO. 017
- S1.1016: Expenses: MOVING ITEM NO. 001; MOVING ITEM NO. 009; MOVING ITEM NO. 008; MOVING ITEM NO. 007; MOVING ITEM NO. 006; MOVING ITEM NO. 005; MOVING ITEM NO. 004; MOVING ITEM NO. 003; MOVING ITEM NO. 002; MOVING ITEM NO. 011; MOVING ITEM NO. 012; MOVING ITEM NO. 013; CO#7
- S1.1017: Expenses: MOVING ITEM NO. 014; MOVING ITEM NO. 017; MOVING ITEM NO. 018; MOVING ITEM NO. 019; MOVING ITEM NO. 020; MOVING ITEM NO. 021; MOVING ITEM NO. 022; MOVING ITEM NO. 023; MOVING ITEM NO. 026; NO. 018
- S1.1021: Expenses: (New Expense Item)5
- S1.1024: Expenses: NO.032; NO.036; NO.037; NO.038; NO.042; NO.043
- S1.1185: Expenses: (New Expense Item)
- S1.1045: Expenses: (New Expense Item)
- S1.1055: Expenses: (New Expense Item)
- S1.1060: Expenses: (New Expense Item)
- S1.1085: Expenses: (New Expense Item)
- S1.1285: Expenses: (New Expense Item)
- S1.1130: Expenses: (New Expense Item)
- S1.1090: Expenses: (New Expense Item)
- S1.1095: Expenses: (New Expense Item)4; (New Expense Item)3; (New Expense Item); 8990786 - Temp Shoring For Drainage Structures; (New Expense Item)1; (New Expense Item)2
- S1.1110: Expenses: (New Expense Item); (New Expense Item)1
- S1.1025: Expenses: (New Expense Item)1; (New Expense Item)2
- S1.1100: Expenses: (New Expense Item)
- S1.1115: Expenses: (New Expense Item)3; (New Expense Item)
- S1.1105: Expenses: (New Expense Item); (New Expense Item)1; (New Expense Item)2
- S1.1190: Expenses: (New Expense Item)
- S1.1065: Expenses: (New Expense Item)
- S1.1135: Expenses: (New Expense Item)
- S1.1170: Expenses: (New Expense Item)
- S1.1200: Expenses: (New Expense Item)
- S1.1240: Expenses: (New Expense Item)
- S1.1050: Expenses: (New Expense Item); (New Expense Item)1
- S1.1080: Expenses: (New Expense Item)1; (New Expense Item)2; (New Expense Item)
- S1.1070: Expenses: (New Expense Item); (New Expense Item)1
- S1.1210: Expenses: (New Expense Item); (New Expense Item)1
- S1.1120: Expenses: (New Expense Item)
- S1.1125: Expenses: (New Expense Item); (New Expense Item)1
- S1.1215: Expenses: (New Expense Item)13; (New Expense Item)14; (New Expense Item)
- S1.1140: Expenses: (New Expense Item)
- S1.1175: Expenses: (New Expense Item)
- S1.1180: Expenses: (New Expense Item)
- S1.1235: Expenses: (New Expense Item)
- S1.1295: Expenses: (New Expense Item)
- S1.1205: Expenses: (New Expense Item)
- S1.1260: Expenses: (New Expense Item)
- S1.1265: Expenses: (New Expense Item)
- S1.1310: Expenses: (New Expense Item); (New Expense Item)1
- S1.1315: Expenses: (New Expense Item)
- S1.1320: Expenses: (New Expense Item)
- S1.1325: Expenses: (New Expense Item)
- S1.1195: Expenses: (New Expense Item)2
- S1.1275: Expenses: (New Expense Item)
- S1.1018: Expenses: MOVING ITEM NO. 015; MOVING ITEM NO. 016; MOVING ITEM NO. 024; MOVING ITEM NO. 025; MOVING ITEM NO. 027; MOVING ITEM NO. 019; MOVING ITEM NO. 020
- S1.1023: Expenses: (New Expense Item)1; (New Expense Item)11; (New Expense Item)21; (New Expense Item)31; (New Expense Item); (New Expense Item)2; (New Expense Item)3; (New Expense Item)4; (New Expense Item)5; (New Expense Item)6; (New Expense Item)7; (New Expense Item)8; NO.021; NO.022; NO.026; NO.027; NO.028; NO.029; NO.030; NO.031; NO.034; NO.035; NO.039; NO.040; NO.041; NO.044; MOVING ITEM NO.010
- S1.1290: Expenses: (New Expense Item)
- S1.1165: Expenses: (New Expense Item)
- S1.1270: Expenses: (New Expense Item); (New Expense Item)1
- S1.1300: Expenses: (New Expense Item)
- S1.1305: Expenses: (New Expense Item)
- S1.1330: Expenses: (New Expense Item)1
- S1.1335: Expenses: (New Expense Item)1
- S1.1075: Expenses: (New Expense Item); CO # 8

| ID | WBS | Activity | Duration | Start | Finish | Predecessors | Complete | Remaining | Planned start | Planned finish | Calendar | Cost | Actual cost |
| --- | --- | --- | --- | --- | --- | --- | --- | --- | --- | --- | --- | --- | --- |
| S1.1145 |  | 9" x 15" Header Curb STA. 109+83 LT- 110+67 LT & 110+95 LT- 307+07 LT | 2d | 2025-07-14 | 2025-07-15 | S1.1140, S1.1075 |  |  |  |  |  | 7,200 |  |
| S1.1220 |  | HMA Leveling/Buildup | 3d | 2025-07-14 | 2025-07-16 | S1.1215, S1.1075 |  |  |  |  |  | 209,550.5 |  |
| S1.1150 |  | 10' Shared Use Path to Include GABC base STA. 104+50 LT- 111+85 LT | 2d | 2025-07-16 | 2025-07-17 | S1.1145 |  |  |  |  |  | 263,497.5 |  |
| S1.1340 |  | Temporary Pavement Markings Stage 1 | 3d | 2025-07-17 | 2025-07-21 | S1.1335, S1.1220 |  |  |  |  |  | 1,443.75 |  |
| S1.1225 |  | Concrete Island Construction STA. 110+28 CTR.- 112+62 CTR., 112+24 LT- 112+60 LT | 5d | 2025-07-22 | 2025-07-28 | S1.1195, S1.1015.2, S1.1340 |  |  |  |  |  | 54,000 |  |
| S1.1345 |  | Traffic Signals -Electrical | 5d | 2025-07-22 | 2025-07-28 | S1.1340 |  |  |  |  |  | 80,782.55 |  |
| S1.1230 |  | HMA Surface Course 101+05- 111+50 | 2d | 2025-07-29 | 2025-07-30 | S1.1225 |  |  |  |  | SCDOT- Asphalt/Winter | 263,424 |  |
| S1.1155 |  | Backfill Mow Strip/Shared Use Path STA. 104+50 LT- 113+00 LT | 4d | 2025-07-31 | 2025-08-05 | S1.1150, S1.1080, S1.1230 |  |  |  |  |  | 12,203.45 |  |
| S1.1160 |  | Permanent Grassing STA. 104+50 LT- 113+00 LT | 1d | 2025-08-06 | 2025-08-06 | S1.1155 |  |  |  |  |  | 14,622.5 |  |
| S1.1030 |  | Storm Drainage NP-100 STA. 100+41 - 100+54 RT | 1d | 2025-08-18 | 2025-08-18 | S1.1025, S1.1023, S1.1165, S1.1160, S2.1012 |  |  |  |  |  | 76,469.2 |  |
| S1.1035 |  | Construct CB 101 & JB 100 STA. 100+41 RT- 100+54 RT | 1d | 2025-08-19 | 2025-08-19 | S1.1030 |  |  |  |  |  | 5,258 |  |
| S1.1280 |  | 10' Shared Use Path to Include GABC Base STA. 113+54 LT- 11+02 LT. | 2d | 2025-08-20 | 2025-08-21 | S1.1275, S1.1270, S1.1035 |  |  |  |  |  | 65,415 |  |
| S1.1101 |  | Flowable Fill 1 | 3d | 2025-08-22 | 2025-08-26 | S1.1300, S1.1280 |  |  |  |  |  | 17,010 |  |
| S1.1246 |  | Flowable Fill 2 | 2d | 2025-08-27 | 2025-08-28 | S1.1101 |  |  |  |  |  | 17,010 |  |
| S3.1126 |  | Flowable Fill 4 | 3d | 2026-07-29 | 2026-07-31 | S3.1128, S1.1246 |  |  |  |  |  | 17,010 |  |
|  | 2 | **Stage 2A** |  | 2023-03-28 | 2026-04-07 |  |  |  |  |  |  |  |  |
| S2.1001 |  | Spectrum Utility Issue | 5d | 2023-03-28 A | 2024-11-25 A | S1.1015.2 FF, S1.1045 | 100% |  | 2024-01-04 | 2024-01-10 |  |  |  |
| S2.1035 |  | Rip Rap Outlet Protection STA. 144+70 RT | 1d | 2023-10-06 A | 2023-10-09 A | S1.1285 SS | 100% |  | 2024-05-15 | 2024-05-15 |  | 20,551.04 | 9,885.14 |
| S2.1025 |  | Storm Drainage NP 317, OP 316 | 5d | 2023-10-09 A | 2023-10-13 A | S2.1035 | 100% |  | 2024-05-03 | 2024-05-09 |  | 76,469.2 | 45,833.75 |
| S2.1030 |  | Construct CB 317, 316 | 3d | 2023-10-10 A | 2023-10-13 A | S2.1025 | 100% |  | 2024-05-10 | 2024-05-14 |  | 52,595 | 34,801.7 |
| S2.1045 |  | Construct CB 333,329, 329B, 327, 325, JB 324 | 3d | 2024-02-09 A | 2024-02-09 A | S2.1030 | 100% |  | 2024-02-22 | 2024-02-26 |  | 31,548 | 19,454.6 |
| S2.1050 |  | Remove Brick Wall 151+59 RT.- 152+38 RT | 1d | 2024-02-09 A | 2024-02-09 A | S1.1235 | 100% |  | 2024-07-25 | 2024-07-25 |  | 10,726.62 | 5,740 |
| S2.1020 |  | Rip Rap Outlet Protection Sta. 137+70 RT. | 1d | 2024-03-04 A | 2024-03-04 A | S2.1045 | 100% |  | 2024-06-10 | 2024-06-10 |  | 20,551.04 | 9,832.98 |
| S2.1002 |  | AT&T Utility Issue | 5d | 2025-02-01 A | 2025-07-10 | S1.1015.2 |  | 5d | 2025-03-03 | 2025-03-07 |  |  |  |
| S2.1040 |  | Storm Drainage NP 339 and 336 | 3d | 2025-02-17 A | 2025-02-28 A | S2.1035, S2.1001 SS, S2.1045, S2.1002 SS | 100% |  | 2025-03-10 | 2025-03-12 |  | 71,177.34 | 29,043.2 |
| S2.1042 |  | Storm Drainage NP 333 and 332 | 3d | 2025-02-17 A | 2025-02-28 A | S2.1040 | 100% |  | 2025-03-13 | 2025-03-17 |  | 59,912.34 | 14,053.75 |
| S2.1043 |  | Storm Drainage NP 329 and 329B | 3d | 2025-02-17 A | 2025-02-28 A | S2.1042 | 100% |  | 2025-03-18 | 2025-03-20 |  | 59,912.34 | 12,490.65 |
| S2.1046 |  | Construct CB 339, 336, 332 | 3d | 2025-02-17 A | 2025-02-28 A | S2.1050 | 100% |  | 2025-03-03 | 2025-03-05 |  | 3,028 |  |
| S2.1055 |  | Fine Grading 123+00 RT.- 160+56 RT. | 4d | 2025-03-24 A | 2025-03-28 A | S2.1046 | 100% |  | 2025-03-06 | 2025-03-11 |  | 13,138.85 | 3,654.93 |
| S2.1060 |  | Curb and Gutter 123+00 RT. - 160+56 RT. | 8d | 2025-03-24 A | 2025-03-28 A | S2.1055 | 100% |  | 2025-03-12 | 2025-03-21 |  | 48,075 | 2,325 |
| S2.1065 |  | Concrete Driveway STA. 123+00 RT.- 160+56 RT. | 6d | 2025-03-24 A | 2025-03-28 A | S2.1046 | 100% |  | 2025-04-07 | 2025-04-14 |  | 29,370 |  |
| S2.1026 |  | Storm Drainage NP 321, 319, 318 | 5d | 2025-04-02 A | 2025-04-14 A | S2.1060, S2.1044 | 100% |  | 2025-04-04 | 2025-04-10 |  |  |  |
| S2.1031 |  | Construct CB 321, 319, 318 | 5d | 2025-04-02 A | 2025-04-14 A | S2.1026 | 100% |  | 2025-04-11 | 2025-04-17 |  |  |  |
| S2.1044 |  | Storm Drainage NP 327, 325 and 324 | 3d | 2025-04-02 A | 2025-04-14 A | S2.1043 | 100% |  | 2025-04-01 | 2025-04-03 |  | 59,912.34 | 7,202.85 |
| S2.1041 |  | Flowable Fill 3 | 3d | 2025-04-10 A | 2025-04-10 A | S2.1065 | 100% |  | 2025-11-18 | 2025-11-20 |  | 17,010 | 9,135 |
| S2.1075 |  | HMA Intermediate Course Type B STA. 123+00 RT.- 160+56 RT. | 4d | 2025-04-10 A | 2025-04-14 A | S2.1065 | 100% |  | 2025-04-24 | 2025-04-29 |  | 132,859.65 | 166,957.43 |
| S2.1070 |  | Pedestrian Ramp Construction 153+00 RT.- 154+00 RT. | 2d | 2025-07-11 | 2025-07-14 | S2.1065, S2.1031, S2.1002 |  |  |  |  |  | 50,000 |  |
| S2.1080 |  | HMA Surface Course for Leveling/Wedging STA. 123+00 RT.- 160+56 RT. | 2d | 2025-07-15 | 2025-07-16 | S2.1075, S2.1070 |  |  |  |  | SCDOT- Asphalt/Winter | 227,265.5 |  |
| S2.1085 |  | Retaining Wall Construction 156+40 RT.- 159+65 RT. | 5d | 2025-07-17 | 2025-07-23 | S2.1080, S2B.1080.1 |  |  |  |  |  | 10,726.62 |  |
| S2.1005 |  | Borrow Excavation Placement to Subgrade for Curb and Gutter 123+00 RT- 160+56 RT | 5d | 2025-07-29 | 2025-08-04 | S1.1345, S1.1250, S1.1240, S1.1251, S2.1001, S2.1002 |  |  |  |  |  | 52,901.05 |  |
| S2.1010 |  | Storm Drainage NP 308 and 307 | 3d | 2025-08-05 | 2025-08-07 | S2.1005 |  |  |  |  |  | 25,553.7 |  |
| S2.1011 |  | Storm Drainage NP 306 and 301 | 3d | 2025-08-08 | 2025-08-12 | S2.1010 |  |  |  |  |  | 25,457.75 |  |
| S2.1012 |  | Storm Drainage NP 313 and 312 | 3d | 2025-08-13 | 2025-08-15 | S2.1011 |  |  |  |  |  | 25,457.75 |  |
| S2.1015 |  | Construct CB 308 and 307 | 3d | 2025-08-18 | 2025-08-20 | S2.1012 |  |  |  |  |  | 40,451 |  |
| S2.1016 |  | Construct CB 306 and 301 | 3d | 2025-08-21 | 2025-08-25 | S2.1015 |  |  |  |  |  | 10,370.5 |  |
| S2.1017 |  | Construct CB 300, 313 and JB 312 | 3d | 2025-08-26 | 2025-08-28 | S2.1016 |  |  |  |  |  | 10,370.5 |  |
| S2.1090 |  | Borrow Excavation Placement 123+00 RT. - 160+56 RT. | 8d | 2025-09-02 | 2025-09-11 | S2.1085, S2.1017 |  |  |  |  |  | 52,924.45 |  |
| S2.1095 |  | Permanent Grassing STA. 123+00 RT.- 160+56 RT. | 1d | 2025-09-12 | 2025-09-12 | S2.1090 |  |  |  |  |  | 7,500 |  |
| S2.1100 |  | Pavement Removal STA. 120+20 LT.- 123+70 LT. | 2d | 2025-09-15 | 2025-09-16 | S2.1095 |  |  |  |  |  | 25,593.75 |  |
| S2.1105 |  | Unclassified Excavation STA. 120+10 LT- 160+56 LT. | 6d | 2025-09-17 | 2025-09-24 | S2.1100 |  |  |  |  |  | 53,800.5 |  |
| S2.1110 |  | Borrow Excavation 124+50 LT.- 160+56 LT. | 7d | 2025-09-25 | 2025-10-03 | S2.1105 |  |  |  |  |  | 52,901.05 |  |
| S2.1115 |  | Driveway Pipes DP- 100, 101 and 102 | 3d | 2025-10-06 | 2025-10-08 | S2.1110 |  |  |  |  |  | 2,914.6 |  |
| S2.1116 |  | Driveway Pipes DP- 103, 104 and 105 | 3d | 2025-10-09 | 2025-10-13 | S2.1115 |  |  |  |  |  | 2,914.6 |  |
| S2.1117 |  | Driveway Pipes DP- 107, 108 and 109 | 3d | 2025-10-14 | 2025-10-16 | S2.1116 |  |  |  |  |  | 2,914.6 |  |
| S2.1118 |  | Driveway Pipes DP- 110, 111 and 112 Sta.126+12 LT.- 150+85 LT. | 3d | 2025-10-17 | 2025-10-21 | S2.1117 |  |  |  |  |  | 2,914.6 |  |
| S2.1120 |  | Rip Rap Lined Ditches 130+39 LT.- 142+00 LT., 152+15 LT.- 153+00 LT., | 5d | 2025-10-22 | 2025-10-28 | S2.1115, S2.1118 |  |  |  |  |  | 20,551.04 |  |
| S2.1125 |  | Storm Drainage NP 311, 310 and 309 | 3d | 2025-10-29 | 2025-10-31 | S2.1120 |  |  |  |  |  | 19,117.3 |  |
| S2.1127 |  | Storm Drainage NP 305, 304 and 303 | 3d | 2025-11-03 | 2025-11-05 | S2.1125 |  |  |  |  |  | 19,117.3 |  |
| S2.1128 |  | Storm Drainage NP 302,315 and 314 | 3d | 2025-11-06 | 2025-11-10 | S2.1127 |  |  |  |  |  | 19,117.3 |  |
| S2.1129 |  | Storm Drainage NP 322, 323, 340 and 338 | 3d | 2025-11-11 | 2025-11-13 | S2.1128 |  |  |  |  |  | 19,117.3 |  |
| S2.1126 |  | Storm Drainage Cont. NP 337, 342 and 341 | 3d | 2025-11-14 | 2025-11-18 | S2.1020, S2.1129 |  |  |  |  |  | 25,553.7 |  |
| S2.1132 |  | Storm Drainage Cont. NP 335, 334 and 331 | 3d | 2025-11-19 | 2025-11-21 | S2.1126 |  |  |  |  |  | 25,457.75 |  |
| S2.1133 |  | Storm Drainage Cont. NP 330, 328, 326, and STA. 129+08 LT - 159+70 LT | 3d | 2025-11-24 | 2025-12-01 | S2.1132 |  |  |  |  |  | 25,457.75 |  |
| S2.1130 |  | Construct CB 311, DI 310 and CB 309 | 3d | 2025-12-02 | 2025-12-04 | S2.1133 |  |  |  |  |  | 10,379 |  |
| S2.1134 |  | Construct CB 305, 304, 303 and 302 | 3d | 2025-12-05 | 2025-12-09 | S2.1130 |  |  |  |  |  | 49,363 |  |
| S2.1136 |  | Construct DI315, BC314, 322 and 320 | 3d | 2025-12-10 | 2025-12-12 | S2.1134 |  |  |  |  |  | 8,626 |  |
| S2.1137 |  | Construct HW 323, CB340 and 338 | 3d | 2025-12-15 | 2025-12-17 | S2.1136 |  |  |  |  |  | 10,354 |  |
| S2.1131 |  | Construct cont CB 337, 343 and 342 | 3d | 2025-12-18 | 2025-12-22 | S2.1137 |  |  |  |  |  | 4,004 |  |
| S2.1138 |  | Construct cont CB 341, 335, 334, and 330 | 3d | 2026-01-05 | 2026-01-07 | S2.1131 |  |  |  |  |  | 8,943 |  |
| S2.1139 |  | Construct cont JB 344, CB 328, and 326 | 3d | 2026-01-08 | 2026-01-12 | S2.1138 |  |  |  |  |  | 1,254 |  |

Notes:
- S1.1145: Expenses: (New Expense Item)
- S1.1220: Expenses: (New Expense Item); (New Expense Item)1; (New Expense Item)2
- S1.1150: Expenses: (New Expense Item); (New Expense Item)1
- S1.1340: Expenses: (New Expense Item)41
- S1.1225: Expenses: (New Expense Item)
- S1.1345: Expenses: (New Expense Item)3; (New Expense Item)4; (New Expense Item)5; (New Expense Item)6; (New Expense Item)7; (New Expense Item)8; (New Expense Item)9; (New Expense Item)10; (New Expense Item)11; (New Expense Item)12; (New Expense Item)15; (New Expense Item)16; (New Expense Item)17; (New Expense Item)18; (New Expense Item)19; (New Expense Item)20; (New Expense Item)21; (New Expense Item)22; (New Expense Item)23; (New Expense Item)24; (New Expense Item)25; (New Expense Item)26; (New Expense Item)27; (New Expense Item)28
- S1.1230: Expenses: (New Expense Item); (New Expense Item)1
- S1.1155: Expenses: (New Expense Item)
- S1.1160: Expenses: (New Expense Item)1; (New Expense Item)2; (New Expense Item)3; (New Expense Item)4; (New Expense Item)5; (New Expense Item)6; (New Expense Item)7
- S1.1030: Expenses: (New Expense Item); (New Expense Item)1
- S1.1035: Expenses: (New Expense Item)
- S1.1280: Expenses: (New Expense Item)
- S1.1101: Expenses: (New Expense Item)
- S1.1246: Expenses: (New Expense Item)
- S3.1126: Expenses: (New Expense Item)
- S2.1035: Expenses: (New Expense Item)
- S2.1025: Expenses: (New Expense Item); (New Expense Item)1
- S2.1030: Expenses: (New Expense Item)2; (New Expense Item); (New Expense Item)1; (New Expense Item)5; (New Expense Item)51
- S2.1045: Expenses: (New Expense Item)
- S2.1050: Expenses: (New Expense Item)
- S2.1020: Expenses: (New Expense Item)
- S2.1040: Expenses: (New Expense Item); (New Expense Item)1; (New Expense Item)2; (New Expense Item)3; (New Expense Item)4
- S2.1042: Expenses: (New Expense Item)2; (New Expense Item)3; (New Expense Item)4
- S2.1043: Expenses: (New Expense Item)2; (New Expense Item)3; (New Expense Item)4
- S2.1046: Expenses: (New Expense Item)1
- S2.1055: Expenses: (New Expense Item)
- S2.1060: Expenses: (New Expense Item)
- S2.1065: Expenses: (New Expense Item)
- S2.1044: Expenses: (New Expense Item)2; (New Expense Item)3; (New Expense Item)4
- S2.1041: Expenses: (New Expense Item)
- S2.1075: Expenses: (New Expense Item); (New Expense Item)1
- S2.1070: Expenses: (New Expense Item)
- S2.1080: Expenses: (New Expense Item); (New Expense Item)1; (New Expense Item)2
- S2.1085: Expenses: (New Expense Item)
- S2.1005: Expenses: (New Expense Item); (New Expense Item)1
- S2.1010: Expenses: (New Expense Item); (New Expense Item)1
- S2.1011: Expenses: (New Expense Item); (New Expense Item)1
- S2.1012: Expenses: (New Expense Item); (New Expense Item)1
- S2.1015: Expenses: (New Expense Item)1; 8990786 - Temp Shoring For Drainage Structures; (New Expense Item)2; (New Expense Item)3; (New Expense Item)4
- S2.1016: Expenses: (New Expense Item)2; (New Expense Item)3; (New Expense Item)4
- S2.1017: Expenses: (New Expense Item)2; (New Expense Item)3; (New Expense Item)4
- S2.1090: Expenses: (New Expense Item); (New Expense Item)1
- S2.1095: Expenses: (New Expense Item)
- S2.1100: Expenses: (New Expense Item)
- S2.1105: Expenses: (New Expense Item)
- S2.1110: Expenses: (New Expense Item); (New Expense Item)1
- S2.1115: Expenses: (New Expense Item)
- S2.1116: Expenses: (New Expense Item)
- S2.1117: Expenses: (New Expense Item)
- S2.1118: Expenses: (New Expense Item)
- S2.1120: Expenses: (New Expense Item)
- S2.1125: Expenses: (New Expense Item); (New Expense Item)1
- S2.1127: Expenses: (New Expense Item); (New Expense Item)1
- S2.1128: Expenses: (New Expense Item); (New Expense Item)1
- S2.1129: Expenses: (New Expense Item); (New Expense Item)1
- S2.1126: Expenses: (New Expense Item); (New Expense Item)1
- S2.1132: Expenses: (New Expense Item); (New Expense Item)1
- S2.1133: Expenses: (New Expense Item); (New Expense Item)1
- S2.1130: Expenses: (New Expense Item)5; (New Expense Item)6; (New Expense Item)7
- S2.1134: Expenses: (New Expense Item); (New Expense Item)1; (New Expense Item)10
- S2.1136: Expenses: (New Expense Item)2; (New Expense Item)3; (New Expense Item)4
- S2.1137: Expenses: (New Expense Item)8; (New Expense Item)9
- S2.1131: Expenses: (New Expense Item)2; (New Expense Item)3
- S2.1138: Expenses: (New Expense Item); (New Expense Item)1
- S2.1139: Expenses: (New Expense Item)4

| ID | WBS | Activity | Duration | Start | Finish | Predecessors | Calendar | Cost |
| --- | --- | --- | --- | --- | --- | --- | --- | --- |
| S2.1135 |  | Curb and Gutter 120+20 LT.- 160+56 LT. | 5d | 2026-01-13 | 2026-01-19 | S2.1139 |  | 48,075 |
| S2.1140 |  | Concrete Driveway 126+12 LT.- 150+85 LT. | 4d | 2026-01-20 | 2026-01-23 | S2.1135 |  | 29,370 |
| S2.1145 |  | HMA Intermediate Course Type B | 2d | 2026-01-26 | 2026-01-27 | S2.1140 |  | 132,859.65 |
| S2.1150 |  | HMA Surface Course for Leveling/Wedging STA. 120+20 LT.- 160+56 LT. | 2d | 2026-03-02 | 2026-03-03 | S2.1145 | SCDOT- Asphalt/Winter | 65,415 |
| S2.1155 |  | 9"X15" Header Curb STA. 404+68 RT. 154+98 LT., 155+26 LT.- 155+58 LT. | 2d | 2026-03-04 | 2026-03-05 | S2.1150, S2.1046, S2.1041 |  | 7,200 |
| S2.1160 |  | 10' Shared Use Path to Include GABC Base Course STA. 120+20 LT.- 160+56 LT. | 4d | 2026-03-06 | 2026-03-11 | S2.1155 |  | 65,415 |
| S2.1165 |  | Bollard Placement at Avondale Dr. STA. 120+23 LT.- 120+85 LT. | 3d | 2026-03-12 | 2026-03-16 | S2.1160 |  | 30,000 |
| S2.1170 |  | Pedestrian Ramp Construction STA. 153+00 LT.- 154+00 LT. | 3d | 2026-03-17 | 2026-03-19 | S2.1165 |  | 50,000 |
| S2.1175 |  | Backfill Mow Strip and Shared use Path STA. 120+20 LT.- 160+56 LT. | 4d | 2026-03-20 | 2026-03-25 | S2.1170 |  | 52,111.8 |
| S2.1180 |  | Permanent Grassing STA. 120+20 LT- 160+56 LT | 1d | 2026-03-26 | 2026-03-26 | S2.1175 |  | 14,622.5 |
| S2.1185 |  | Wooden Fence Construction STA. 156+50 RT.- 161+75 RT. | 3d | 2026-03-27 | 2026-03-31 | S2.1180 |  | 20,748 |
| S2.1190 |  | Traffic Signals - Electrical Stage 2 | 3d | 2026-04-01 | 2026-04-07 | S2.1185 |  | 125,112.43 |
|  | 3 | **Stage 3** |  | 2026-04-08 | 2026-09-02 |  |  |  |
| S3.1005 |  | Unclassified excavation/borrow material placement as required 160+50 LT./RT. | 2d | 2026-04-08 | 2026-04-09 | S2.1190 |  | 112,468.75 |
| S3.1010 |  | Temporary pavement construction | 2d | 2026-04-10 | 2026-04-13 | S3.1005 |  | 335,022.75 |
| S3.1015 |  | 4" Graded Aggregate Base Course 160+50 LT.- 170+50 LT. | 4d | 2026-04-14 | 2026-04-17 | S3.1010 |  | 15,094.6 |
| S3.1020 |  | HMA Surface Course Type B for temporary pavement 160+50 LT.- 170+50 LT. | 2d | 2026-04-20 | 2026-04-21 | S3.1015 | SCDOT- Asphalt/Winter | 65,415 |
| S3.1025 |  | Temporary pavement markings 160+50- 170+50 LT./RT. | 1d | 2026-04-22 | 2026-04-22 | S3.1020 |  | 5,478 |
| S3.1030 |  | Temporary barrier wall install 160+50- 170+50 LT./RT. | 2d | 2026-04-23 | 2026-04-24 | S3.1025 |  | 109,875 |
| S3.1035 |  | Asphalt pavement removal 160+50 RT.- 170+50 RT. | 3d | 2026-04-27 | 2026-04-29 | S3.1030 |  | 25,593.75 |
| S3.1040 |  | Unclassified excavation 160+50 RT.- 170+50 RT. | 3d | 2026-04-30 | 2026-05-04 | S3.1035 |  | 59,567.7 |
| S3.1045 |  | Storm drainage NP-437 and 432 | 3d | 2026-05-05 | 2026-05-07 | S3.1040, S2B.1080.1 |  | 8,078 |
| S3.1046 |  | Storm drainage Sta. 161+15 RT.- 163+25 RT. and 165+00 RT.- 165+90 RT. | 3d | 2026-05-08 | 2026-05-12 | S3.1045 |  | 44,805.9 |
| S3.1050 |  | Construct CB 437 and 436 | 3d | 2026-05-13 | 2026-05-15 | S2B.1080.1, S3.1046 |  | 22,609.75 |
| S3.1051 |  | Construct CB 432 and 431 | 3d | 2026-05-18 | 2026-05-20 | S3.1050 |  | 10,516 |
| S3.1052 |  | Construct CB 429 Sta. 163+25 RT.- 168+40 RT. | 3d | 2026-05-21 | 2026-05-27 | S3.1051 |  | 10,516 |
| S3.1055 |  | Storm drainage NP 429 and 431 | 3d | 2026-05-28 | 2026-06-01 | S2B.1080.1, S3.1052 |  | 22,402.95 |
| S3.1056 |  | Storm drainage NP 436 and 438 Sta. 163+25 RT.- 168+40 RT. | 3d | 2026-06-02 | 2026-06-04 | S3.1055 |  | 22,402.95 |
| S3.1060 |  | Borrow material placement Sta. 160+50 RT.- 170+50 RT. | 2d | 2026-06-05 | 2026-06-08 | S2B.1080.1, S3.1056 |  | 52,901.05 |
| S3.1065 |  | Fine grading Sta. 160+50 RT.- 170+50 RT. | 2d | 2026-06-09 | 2026-06-10 | S3.1060, S2B.1080.1 |  | 13,138.85 |
| S3.1070 |  | Curb and Gutter Sta. 160+50 RT.- 170+50 RT. | 3d | 2026-06-11 | 2026-06-15 | S3.1065, S2B.1080.1 |  | 48,075 |
| S3.1075 |  | Pedestrian ramp construction Sta. 164+00 RT.- 168+00 RT. | 3d | 2026-06-16 | 2026-06-18 | S3.1070, S2B.1080.1 |  | 50,000 |
| S3.1080 |  | Concrete driveway Sta. 168+00 RT.- 168+32 RT., 169+90 RT.- 170+27 RT. | 3d | 2026-06-19 | 2026-06-23 | S3.1075, S2B.1080.1 |  | 29,370 |
| S3.1085 |  | Concrete sidewalk Sta. 160+50 RT- 170+50 RT. | 3d | 2026-06-24 | 2026-06-26 | S3.1080, S2B.1080.1 |  | 16,821 |
| S3.1090 |  | HMA Base Course Type A Sta. 160+50 RT.- 170+50 RT. | 1d | 2026-06-29 | 2026-06-29 | S3.1085, S2B.1080.1 |  | 137,013.75 |
| S3.1095 |  | HMA intermediate course type B Sta. 160+50 RT.- 170+50 RT. | 1d | 2026-06-30 | 2026-06-30 | S3.1090, S2B.1080.1 |  | 67,444.65 |
| S3.1100 |  | 4" Graded Aggregate Base Course Sta. 160+50 RT.- 170+50 RT. | 2d | 2026-07-01 | 2026-07-02 | S3.1095 |  | 15,108.8 |
| S3.1105 |  | HMA Surface Course Type B for temporary pavement Sta. 160+50 RT.- 170+50 RT. | 1d | 2026-07-07 | 2026-07-07 | S3.1100 | SCDOT- Asphalt/Winter | 65,415 |
| S3.1110 |  | Temporary pavement markings Sta. 160+50 RT.- 170+50 RT. | 1d | 2026-07-08 | 2026-07-08 | S3.1105 |  | 198,009 |
| S3.1115 |  | Asphalt pavement removal 160+50 LT.-170+50 LT. | 2d | 2026-07-09 | 2026-07-10 | S3.1110 |  | 25,593.75 |
| S3.1120 |  | Unclassified excavation 160+50 LT.- 170+50 LT. | 3d | 2026-07-13 | 2026-07-15 | S3.1115 |  | 59,567.7 |
| S3.1125 |  | Storm drainage DP 113, 114, and 115 | 3d | 2026-07-16 | 2026-07-20 | S3.1120 |  | 6,060 |
| S3.1127 |  | Storm drainage NP 435, 434, and 433 | 3d | 2026-07-21 | 2026-07-23 | S3.1125 |  | 2,835 |
| S3.1128 |  | Storm drainage 430 and 428 Sta. 161+55 LT.- 173+55 LT. | 3d | 2026-07-24 | 2026-07-28 | S3.1127 |  | 2,520 |
| S3.1130 |  | Construct CB 438 and 434 | 3d | 2026-08-03 | 2026-08-05 | S3.1126 |  | 8,978 |
| S3.1131 |  | Construct CB 433 and 430 | 3d | 2026-08-06 | 2026-08-10 | S3.1130 |  | 34,368 |
| S3.1132 |  | Construct CB 428 and 427 Sta. 161+55 LT.- 173+55 LT | 3d | 2026-08-11 | 2026-08-13 | S3.1131 |  | 3,470 |
| S3.1135 |  | Borrow material placement Sta. 160+50 LT.- 170+50 LT. | 3d | 2026-08-14 | 2026-08-18 | S3.1132 |  | 52,924.45 |
| S3.1140 |  | Fine grading 160+50 LT.- 170+50 LT. | 2d | 2026-08-19 | 2026-08-20 | S3.1135 |  | 13,138.85 |
| S3.1145 |  | Curb and gutter 160+50 LT.- 170+50 LT. | 2d | 2026-08-21 | 2026-08-24 | S3.1140 |  | 48,075 |
| S3.1150 |  | Concrete driveways Sta. 161+45 LT.- 170+35 LT. | 2d | 2026-08-25 | 2026-08-26 | S3.1145 |  | 29,370 |
| S3.1155 |  | 10' shared use path to include GABC base course Sta. 160+50 LT.- 170+50 LT. | 2d | 2026-08-27 | 2026-08-28 | S3.1150 |  | 65,415 |
| S3.1160 |  | HMA Base Course Type A Sta. 160+50 LT.- 170+50 LT. | 1d | 2026-08-31 | 2026-08-31 | S3.1155 |  | 65,415 |
| S3.1165 |  | HMA Intermediate course Type B Sta. 160+50 LT.- 170+50 LT. | 1d | 2026-09-01 | 2026-09-01 | S3.1160 |  | 65,415 |
| S3.1170 |  | Temporary pavement markings Sta. 160+50 LT./RT.- 170+50 LT./RT.y | 1d | 2026-09-02 | 2026-09-02 | S3.1165 |  | 13,559.25 |

Notes:
- S2.1135: Expenses: (New Expense Item)
- S2.1140: Expenses: (New Expense Item)
- S2.1145: Expenses: (New Expense Item); (New Expense Item)1
- S2.1150: Expenses: (New Expense Item)
- S2.1155: Expenses: (New Expense Item)
- S2.1160: Expenses: (New Expense Item)
- S2.1165: Expenses: (New Expense Item)
- S2.1170: Expenses: (New Expense Item)
- S2.1175: Expenses: (New Expense Item)
- S2.1180: Expenses: (New Expense Item); (New Expense Item)1; (New Expense Item)2; (New Expense Item)3; (New Expense Item)4; (New Expense Item)5; (New Expense Item)6
- S2.1185: Expenses: (New Expense Item)
- S2.1190: Expenses: (New Expense Item); (New Expense Item)2; (New Expense Item)3; (New Expense Item)4; (New Expense Item)5; (New Expense Item)6; (New Expense Item)7; (New Expense Item)8; (New Expense Item)9; (New Expense Item)10; (New Expense Item)11; (New Expense Item)12; (New Expense Item)13; (New Expense Item)14; (New Expense Item)15; (New Expense Item)16; (New Expense Item)17; (New Expense Item)18; (New Expense Item)19; (New Expense Item)20; (New Expense Item)21; (New Expense Item)22; (New Expense Item)23; (New Expense Item)24; (New Expense Item)25; (New Expense Item)26; (New Expense Item)27; (New Expense Item)28
- S3.1005: Expenses: (New Expense Item); (New Expense Item)1; (New Expense Item)2
- S3.1010: Expenses: (New Expense Item); (New Expense Item)1
- S3.1015: Expenses: (New Expense Item)
- S3.1020: Expenses: (New Expense Item)
- S3.1025: Expenses: (New Expense Item); (New Expense Item)1
- S3.1030: Expenses: (New Expense Item); (New Expense Item)2
- S3.1035: Expenses: (New Expense Item)
- S3.1040: Expenses: (New Expense Item)
- S3.1045: Expenses: (New Expense Item)
- S3.1046: Expenses: (New Expense Item)1
- S3.1050: Expenses: 8990786 - Temp Shoring For Drainage Structures; (New Expense Item)
- S3.1051: Expenses: (New Expense Item)
- S3.1052: Expenses: (New Expense Item)
- S3.1055: Expenses: (New Expense Item)
- S3.1056: Expenses: (New Expense Item)
- S3.1060: Expenses: (New Expense Item); (New Expense Item)1
- S3.1065: Expenses: (New Expense Item)
- S3.1070: Expenses: (New Expense Item)
- S3.1075: Expenses: (New Expense Item)
- S3.1080: Expenses: (New Expense Item)
- S3.1085: Expenses: (New Expense Item)
- S3.1090: Expenses: (New Expense Item)
- S3.1095: Expenses: (New Expense Item)
- S3.1100: Expenses: (New Expense Item)
- S3.1105: Expenses: (New Expense Item)
- S3.1110: Expenses: (New Expense Item)
- S3.1115: Expenses: (New Expense Item)
- S3.1120: Expenses: (New Expense Item)
- S3.1125: Expenses: (New Expense Item)1; (New Expense Item)2
- S3.1127: Expenses: (New Expense Item)2
- S3.1128: Expenses: (New Expense Item)2
- S3.1130: Expenses: (New Expense Item)2; (New Expense Item)3
- S3.1131: Expenses: (New Expense Item); (New Expense Item)1
- S3.1132: Expenses: (New Expense Item)4
- S3.1135: Expenses: (New Expense Item); (New Expense Item)1
- S3.1140: Expenses: (New Expense Item)
- S3.1145: Expenses: (New Expense Item)
- S3.1150: Expenses: (New Expense Item)
- S3.1155: Expenses: (New Expense Item)
- S3.1160: Expenses: (New Expense Item)1
- S3.1165: Expenses: (New Expense Item)
- S3.1170: Expenses: (New Expense Item)21; (New Expense Item)31; (New Expense Item)41; (New Expense Item)51; (New Expense Item)61; (New Expense Item)71; (New Expense Item)81; (New Expense Item)91

| ID | WBS | Activity | Duration | Start | Finish | Predecessors | Complete | Remaining | Planned start | Planned finish | Cost | Actual cost |
| --- | --- | --- | --- | --- | --- | --- | --- | --- | --- | --- | --- | --- |
|  | 4 | **Stage 2B** |  | 2022-12-06 | 2026-04-07 |  |  |  |  |  |  |  |
| S2B.1005 |  | Erosion Control BMP's Around Perimeter of Detention Pond STA. 213+20 RT.- 216+20 RT | 1d | 2022-12-06 A | 2022-12-08 A | S1.1010 | 100% |  | 2023-03-21 | 2023-03-21 | 258,393 | 154,290.34 |
| S2B.1010 |  | Unclassified Excavation of Detention Pond STA. 213+20 RT.- 216+20 RT. | 6d | 2023-01-16 A | 2023-02-28 A | S2B.1005 | 100% |  | 2023-03-22 | 2023-03-29 | 65,334.9 | 159,318.9 |
| S2B.1030 |  | Rip Rap Outlet Protection for Outfall Pipe STA. 216+08 RT.- 216+68 RT. | 2d | 2023-01-26 A | 2023-01-28 A | S2B.1010 | 100% |  | 2023-04-06 | 2023-04-11 | 20,551.04 | 20,551.04 |
| S2B.1020 |  | Storm Drainage Outfall Pipe OP-400A STA. 215+50 RT- 216+08 RT. | 1d | 2023-03-13 A | 2023-03-15 A | S2B.1015 SS | 100% |  | 2023-05-01 | 2023-05-01 | 14,236 | 70,824.1 |
| S2B.1015 |  | Outlet Structure CS-400A STA. 215+50 RT | 1d | 2023-03-14 A | 2023-03-16 A | S2B.1030 | 100% |  | 2023-04-28 | 2023-04-28 | 222,250 | 331,630.15 |
| S2B.1055 |  | Borrow Excavation STA. 210- 216 | 8d | 2023-06-16 A | 2023-07-31 A | S2B.1015 | 100% |  | 2023-07-21 | 2023-08-01 | 52,924.45 | 82,228.4 |
| S2B.1025 |  | Rip Rap Detention Pond Spillway STA. 215+68 RT.- 215+80 RT | 3d | 2023-07-06 A | 2023-07-07 A | S2B.1020, S2B.1015 | 100% |  | 2023-07-06 | 2023-07-10 | 20,551.04 | 9,898.99 |
| S2B.1045 |  | Permanent Grassing, Erosion Control BMP's for Detention Pond STA. 213+20 RT.- 216+20 RT. | 4d | 2023-07-12 A | 2023-07-13 A | S2B.1025 | 100% |  | 2023-07-13 | 2023-07-18 | 14,622.5 | 38,325 |
| S2B.1035 |  | Storm Drainage OP 400 STA. 213+53 RT. | 1d | 2023-08-22 A | 2023-08-23 A | S2B.1025, S2B.1045 | 100% |  | 2023-08-01 | 2023-08-01 | 5,258 | 17,351.4 |
| S2B.1080 |  | Storm Drainage OP 401 | 1d | 2023-08-25 A | 2023-08-25 A | S2B.1035 | 100% |  | 2023-09-21 | 2023-09-21 | 72,005.47 | 161,488.65 |
| S2B.1080.1 |  | Fiber Optic Line - Utility Issue | 5d | 2023-08-25 A | 2025-07-10 | S2B.1080, S1.1015.2 SS |  | 5d | 2024-01-04 | 2024-01-10 |  |  |
| S2B.1040 |  | Rip Rap Outfall OP 400 213+65 RT. | 1d | 2023-09-27 A | 2023-09-28 A | S2B.1080 | 100% |  | 2023-09-29 | 2023-09-29 | 20,551.04 | 7,277.98 |
| S2B.1165 |  | Retaining wall construction Sta.173+50 LT.- 177+00 LT. | 20d | 2024-01-12 A | 2024-04-05 A | S1.1235 | 100% |  | 2024-08-21 | 2024-09-19 | 454,626.62 | 252,030.62 |
| S2B.1055.1 |  | Borrow Excavation STA. 170+50 RT.- 228+85 RT. | 5d | 2024-04-02 A | 2024-04-05 A | S2B.1055, S1.1045 | 100% |  | 2024-04-01 | 2024-04-05 |  |  |
| S2B.1100 |  | Storm Drain NP 502, 503, 504, 506, 507, 505 STA. 215+55 RT.- 217+40 RT. | 5d | 2024-05-20 A | 2024-05-31 A | S2B.1055.1 | 100% |  | 2024-06-17 | 2024-06-21 | 22,921.44 | 842.7 |
| S2B.1105 |  | Construct CB 501, 502, 503, 504, 506, 507, HW 505 STA. 215+55 RT.- 217+40 RT. | 5d | 2024-05-20 A | 2024-05-31 A | S2B.1100 | 100% |  | 2024-06-24 | 2024-06-28 | 42,782 | 19,741.8 |
| S2B.1157 |  | Storm Drainage NP 424, 423, 422 | 3d | 2025-06-02 A | 2025-06-13 A | S2B.1105 | 100% |  | 2025-12-01 | 2025-12-03 | 24,871.65 | 15,817 |
| S2B.1164 |  | Construct CB 424, 423, 422 | 3d | 2025-06-02 A | 2025-06-13 A | S2B.1105 | 100% |  | 2026-01-12 | 2026-01-14 | 57,838 | 5,258 |
| S2B.1200 |  | Shared use path to include 4" GABC Sta. 170+50 LT.- 228+85 LT. | 8d | 2025-06-16 A | 2025-07-15 | S2B.1164 | 80% | 8d | 2026-02-27 | 2026-03-10 | 15,094.6 |  |
| S2B.1050 |  | Install Woven Wire Fence- Type 1 Around Perimeter of Detention Pond STA. 213+20 RT.- 216+20 RT. | 2d | 2025-07-11 | 2025-07-14 | S2B.1040, S2B.1055.1, S2B.1080.1 |  |  |  |  | 7,854 |  |
| S2B.1080.2 |  | Storm Drainage NP- 420, 418, 417 | 3d | 2025-07-11 | 2025-07-15 | S2B.1080.1 |  |  |  |  | 32,636.03 |  |
| S2B.1060 |  | Storm Drainage NP- 454, 447 and 446 | 3d | 2025-07-15 | 2025-07-17 | S2B.1055, S2B.1050, S2B.1080.1 |  |  |  |  | 44,709.75 |  |
| S2B.1080.3 |  | Storm Drainage NP- 412,411,409 | 3d | 2025-07-16 | 2025-07-18 | S2B.1080.2 |  |  |  |  | 32,636.03 |  |
| S2B.1061 |  | Storm Drainage NP-445, 444 and 443 | 3d | 2025-07-18 | 2025-07-22 | S2B.1060 |  |  |  |  | 22,921.44 |  |
| S2B.1080.4 |  | Storm Drainage NP- 408,405,404 | 3d | 2025-07-21 | 2025-07-23 | S2B.1080.3 |  |  |  |  | 32,636.03 |  |
| S2B.1062 |  | Storm Drainage NP- 442,441,440, & OP 439 STA. 173+56 RT.- 185+70 RT. | 3d | 2025-07-23 | 2025-07-25 | S2B.1061 |  |  |  |  | 31,759.45 |  |
| S2B.1080.5 |  | Storm Drainage NP- 403,401,OP 455 STA. 187+74 RT.- 213+44 RT. | 3d | 2025-07-24 | 2025-07-28 | S2B.1080.4 |  |  |  |  | 32,636.03 |  |
| S2B.1065 |  | Construct CB 454,446,DI 447 | 3d | 2025-07-28 | 2025-07-30 | S2B.1062 |  |  |  |  | 14,134 |  |
| S2B.1066 |  | Construct CB 444, DI 445, DI 443 | 3d | 2025-07-31 | 2025-08-04 | S2B.1065 |  |  |  |  | 31,548 |  |
| S2B.1067 |  | Construct JB 442, CB 441,440, 439 STA. 173+56 RT.- 185+70 RT. | 3d | 2025-08-05 | 2025-08-07 | S2B.1066 |  |  |  |  | 11,900 |  |
| S2B.1070 |  | Install Driveway Pipe DP 116 STA. 181+82 RT.- 182+05 RT. | 2d | 2025-08-08 | 2025-08-11 | S2B.1067 |  |  |  |  | 17,958.4 |  |
| S2B.1075 |  | Rip Rap Outfall OP 439 STA. 182+05 RT. | 1d | 2025-08-12 | 2025-08-12 | S2B.1070 |  |  |  |  | 20,551.04 |  |
| S2B.1085 |  | Construct CB 420, 418,417 | 3d | 2025-08-13 | 2025-08-15 | S2B.1075, S2B.1080.5 |  |  |  |  | 47,322 |  |
| S2B.1086 |  | Construct CB 412,411,JB 409 | 3d | 2025-08-18 | 2025-08-20 | S2B.1085 |  |  |  |  | 7,250 |  |
| S2B.1087 |  | Construct DI 408, CB 405,404,455 | 3d | 2025-08-21 | 2025-08-25 | S2B.1086 |  |  |  |  | 3,805 |  |
| S2B.1088 |  | Construct CB 403,401,400 STA. 187+74 RT.- 213+44 RT. | 3d | 2025-08-26 | 2025-08-28 | S2B.1087 |  |  |  |  | 5,950 |  |
| S2B.1090 |  | Rip Rap Outlet Protection STA. 207+40 RT. | 1d | 2025-09-02 | 2025-09-02 | S2B.1088 |  |  |  |  | 20,551.04 |  |
| S2B.1110 |  | Pavement Removal 182+00 RT.- 197+00 RT | 4d | 2025-09-03 | 2025-09-08 | S2B.1105, S2B.1090 |  |  |  |  | 25,593.75 |  |
| S2B.1111 |  | Fine grading Sta. 170+50 RT.- 228+85 RT. | 4d | 2025-09-09 | 2025-09-12 | S2B.1110 |  |  |  |  | 13,138.85 |  |
| S2B.1115 |  | Curb and Gutter STA. 170+50 RT.- 218+00 RT. | 5d | 2025-09-15 | 2025-09-19 | S2B.1111 |  |  |  |  | 48,075 |  |
| S2B.1120 |  | Concrete Driveway STA. 173+35 RT- 194+65 RT. | 10d | 2025-09-22 | 2025-10-03 | S2B.1115 |  |  |  |  | 29,370 |  |
| S2B.1125 |  | Pedestrian Ramp Construction 190+75 RT.- 222+13 RT. | 10d | 2025-10-06 | 2025-10-17 | S2B.1120 |  |  |  |  | 50,000 |  |
| S2B.1130 |  | Concrete Sidewalk 12+09 RT.- 12+00 LT, 12+00 LT.- 12+57 LT., 125+57 RT.- 11+50 LT. | 8d | 2025-10-20 | 2025-10-29 | S2B.1125 |  |  |  |  | 16,821 |  |
| S2B.1135 |  | Borrow Excavation, Backfill Curb and Gutter, Sidewalk, and Ramps STA. 170+50 RT.- 222+13 RT. | 12d | 2025-10-30 | 2025-11-14 | S2B.1130 |  |  |  |  | 52,901.05 |  |
| S2B.1140 |  | HMA Base Type A for Wedging/Slot Paving 170+50 RT- 228+85 RT. | 4d | 2025-11-17 | 2025-11-20 | S2B.1135 |  |  |  |  | 135,848.5 |  |
| S2B.1145 |  | HMA Intermediate Type B for Wedging/Slot Paving 170+50 RT.- 228+85 RT. | 6d | 2025-11-21 | 2025-12-03 | S2B.1140 |  |  |  |  | 65,415 |  |
| S2B.1150 |  | Borrow excavation placement Sta. 170+50 LT.- 228+85 LT. | 15d | 2025-12-04 | 2026-01-06 | S2B.1145 |  |  |  |  | 52,901.05 |  |
| S2B.1155 |  | Storm Drainage NP 427, 426, 425 | 3d | 2026-01-07 | 2026-01-09 | S2B.1150 |  |  |  |  | 24,871.65 |  |
| S2B.1158 |  | Storm Drainage NP 421, 419, 416 | 3d | 2026-01-12 | 2026-01-14 | S2B.1157, S2B.1155 |  |  |  |  | 24,871.65 |  |
| S2B.1159 |  | Storm Drainage NP 415, 414, 413, DP119 | 3d | 2026-01-15 | 2026-01-19 | S2B.1158 |  |  |  |  | 24,871.65 |  |
| S2B.1156 |  | Storm Drainage cont NP 407, 406, 459 | 3d | 2026-01-20 | 2026-01-22 | S2B.1159 |  |  |  |  | 7,640.48 |  |
| S2B.1162 |  | Storm Drainage cont NP 457, 458, 456 | 3d | 2026-01-23 | 2026-01-27 | S2B.1156 |  |  |  |  | 7,640.48 |  |
| S2B.1163 |  | Storm Drainage cont NP 402, 508, DP122, NP 600 | 3d | 2026-01-28 | 2026-01-30 | S2B.1162 |  |  |  |  | 7,640.48 |  |
| S2B.1160 |  | Construct CB 427, 426, 425 | 3d | 2026-02-02 | 2026-02-04 | S2B.1163 |  |  |  |  | 8,076 |  |
| S2B.1161 |  | Construct cont CB 407, 406, 459 | 3d | 2026-02-02 | 2026-02-04 | S2B.1163 |  |  |  |  | 5,258 |  |
| S2B.1166 |  | Construct CB 421, 419, 416 | 3d | 2026-02-05 | 2026-02-09 | S2B.1164, S2B.1160 |  |  |  |  | 12,386 |  |
| S2B.1168 |  | Construct cont cs 457, 456, 458 | 3d | 2026-02-05 | 2026-02-09 | S2B.1161 |  |  |  |  | 39,385 |  |
| S2B.1167 |  | Construct CB 415, 413, 414, 410 | 3d | 2026-02-10 | 2026-02-12 | S2B.1166 |  |  |  |  | 6,690 |  |
| S2B.1169 |  | Construct cont cs 402, 600 | 3d | 2026-02-10 | 2026-02-12 | S2B.1168 |  |  |  |  | 11,971 |  |
| S2B.1170 |  | Storm drainage DP 122, 119 Sta. 197+51 LT.- 220+45 LT. | 1d | 2026-02-13 | 2026-02-13 | S2B.1165, S2B.1167, S2B.1169 |  |  |  |  | 17,958.4 |  |
| S2B.1175 |  | Fine grade Sta. 170+52 LT.- 228+85 LT. | 6d | 2026-02-16 | 2026-02-23 | S2B.1170 |  |  |  |  | 13,138.85 |  |
| S2B.1180 |  | Construct sediment dam #1 Sta.197+ 50 LT. | 1d | 2026-02-24 | 2026-02-24 | S2B.1175 |  |  |  |  | 20,551.04 |  |
| S2B.1185 |  | Rip rap ditchlines Sta. 209+80 LT.- 228+00 LT. (As directed) | 4d | 2026-02-25 | 2026-03-02 | S2B.1180 |  |  |  |  | 20,551.04 |  |
| S2B.1190 |  | Curb and gutter Sta. 170+50 LT.- 218+00 LT. | 8d | 2026-03-03 | 2026-03-12 | S2B.1185 |  |  |  |  | 48,100 |  |
| S2B.1195 |  | Concrete driveways Sta. 172+00 LT.- 209+90 LT. | 5d | 2026-03-13 | 2026-03-19 | S2B.1190 |  |  |  |  | 29,370 |  |
| S2B.1205 |  | Borrow excavation for shoulders backfilling curb and shared use path Sta. 170+50 LT.- 228+85 LT | 4d | 2026-03-20 | 2026-03-25 | S2B.1200, S2B.1195 |  |  |  |  | 52,924.45 |  |
| S2B.1210 |  | HMA Base Course Type A (As directed) Sta. 170+50 LT.- 228+85 LT. | 3d | 2026-03-26 | 2026-03-30 | S2B.1205 |  |  |  |  | 66,150 |  |
| S2B.1081 |  | Flowable Fill # 5 | 3d | 2026-03-31 | 2026-04-02 | S2B.1210 |  |  |  |  | 17,010 |  |
| S2B.1215 |  | HMA Intermediate Type B for wedging/slot paving Sta. 170+50 LT..- 228+85 LT. | 1d | 2026-03-31 | 2026-03-31 | S2B.1210 |  |  |  |  | 66,150 |  |

Notes:
- S2B.1005: Expenses: (New Expense Item)19; (New Expense Item); (New Expense Item)3; (New Expense Item)4; (New Expense Item)5; (New Expense Item)7; (New Expense Item)8; (New Expense Item)9; (New Expense Item)10; (New Expense Item)11; (New Expense Item)12; (New Expense Item)13; (New Expense Item)14; (New Expense Item)15; (New Expense Item)16; (New Expense Item)17; (New Expense Item)18; (New Expense Item)1; CO #4; CO#5; CO#5-1
- S2B.1010: Expenses: (New Expense Item)
- S2B.1030: Expenses: (New Expense Item)
- S2B.1020: Expenses: (New Expense Item)
- S2B.1015: Expenses: (New Expense Item)6; (New Expense Item)2
- S2B.1055: Expenses: (New Expense Item); (New Expense Item)1
- S2B.1025: Expenses: (New Expense Item)
- S2B.1045: Expenses: (New Expense Item); (New Expense Item)1; (New Expense Item)2; (New Expense Item)3; (New Expense Item)4; (New Expense Item)5; (New Expense Item)6
- S2B.1035: Expenses: (New Expense Item)
- S2B.1080: Expenses: (New Expense Item); (New Expense Item)1; (New Expense Item)4; (New Expense Item)2
- S2B.1040: Expenses: (New Expense Item)
- S2B.1165: Expenses: (New Expense Item); (New Expense Item)1; (New Expense Item)11
- S2B.1100: Expenses: (New Expense Item)
- S2B.1105: Expenses: (New Expense Item); (New Expense Item)1
- S2B.1157: Expenses: (New Expense Item); (New Expense Item)1; (New Expense Item)2
- S2B.1164: Expenses: (New Expense Item)1
- S2B.1200: Expenses: (New Expense Item)
- S2B.1050: Expenses: (New Expense Item)
- S2B.1080.2: Expenses: (New Expense Item)2
- S2B.1060: Expenses: (New Expense Item)
- S2B.1080.3: Expenses: (New Expense Item)2
- S2B.1061: Expenses: (New Expense Item)1
- S2B.1080.4: Expenses: (New Expense Item)2
- S2B.1062: Expenses: (New Expense Item)2
- S2B.1080.5: Expenses: (New Expense Item)2
- S2B.1065: Expenses: (New Expense Item); (New Expense Item)2
- S2B.1066: Expenses: (New Expense Item)1
- S2B.1067: Expenses: (New Expense Item)3
- S2B.1070: Expenses: (New Expense Item); (New Expense Item)1
- S2B.1075: Expenses: (New Expense Item)
- S2B.1085: Expenses: (New Expense Item)
- S2B.1086: Expenses: (New Expense Item)1
- S2B.1087: Expenses: (New Expense Item)2
- S2B.1088: Expenses: (New Expense Item)3
- S2B.1090: Expenses: (New Expense Item)
- S2B.1110: Expenses: (New Expense Item)
- S2B.1111: Expenses: (New Expense Item)
- S2B.1115: Expenses: (New Expense Item)
- S2B.1120: Expenses: (New Expense Item)
- S2B.1125: Expenses: (New Expense Item)
- S2B.1130: Expenses: (New Expense Item)
- S2B.1135: Expenses: (New Expense Item); (New Expense Item)1
- S2B.1140: Expenses: (New Expense Item); (New Expense Item)1; (New Expense Item)2
- S2B.1145: Expenses: (New Expense Item)
- S2B.1150: Expenses: (New Expense Item); (New Expense Item)1
- S2B.1155: Expenses: (New Expense Item); (New Expense Item)1; (New Expense Item)2
- S2B.1158: Expenses: (New Expense Item); (New Expense Item)1; (New Expense Item)2
- S2B.1159: Expenses: (New Expense Item); (New Expense Item)1; (New Expense Item)2
- S2B.1156: Expenses: (New Expense Item)
- S2B.1162: Expenses: (New Expense Item)
- S2B.1163: Expenses: (New Expense Item)
- S2B.1160: Expenses: (New Expense Item)6; (New Expense Item)7
- S2B.1161: Expenses: (New Expense Item)6; (New Expense Item)7; (New Expense Item)8
- S2B.1166: Expenses: (New Expense Item)2; (New Expense Item)3
- S2B.1168: Expenses: (New Expense Item); (New Expense Item)1; (New Expense Item)2
- S2B.1167: Expenses: (New Expense Item)4; (New Expense Item)5
- S2B.1169: Expenses: (New Expense Item)3; (New Expense Item)4; (New Expense Item)5
- S2B.1170: Expenses: (New Expense Item); (New Expense Item)1
- S2B.1175: Expenses: (New Expense Item)
- S2B.1180: Expenses: (New Expense Item)
- S2B.1185: Expenses: (New Expense Item)
- S2B.1190: Expenses: (New Expense Item)
- S2B.1195: Expenses: (New Expense Item)
- S2B.1205: Expenses: (New Expense Item); (New Expense Item)1
- S2B.1210: Expenses: (New Expense Item)
- S2B.1081: Expenses: (New Expense Item)
- S2B.1215: Expenses: (New Expense Item)

| ID | WBS | Activity | Duration | Start | Finish | Predecessors | Complete | Remaining | Planned start | Planned finish | Calendar | Cost | Actual cost |
| --- | --- | --- | --- | --- | --- | --- | --- | --- | --- | --- | --- | --- | --- |
| S2B.1220 |  | Temporary pavement markings 170+50 LT.- 228+85 LT. | 1d | 2026-04-07 | 2026-04-07 | S2B.1215, S2B.1081 |  |  |  |  |  | 14,570.45 |  |
|  | 5 | **Stage 4** |  | 2023-11-13 | 2026-04-13 |  |  |  |  |  |  |  |  |
| S4.1020 |  | Storm drainage DP-123, 124, 125, 126, 127, 129, 130, 132, 133 Sta. 229+00 LT.- 245+75 LT. | 4d | 2023-11-13 A | 2023-11-17 A | S2B.1040 | 100% |  | 2024-12-11 | 2024-12-16 |  | 11,658.4 | 26,478.4 |
| S4.1065 |  | Borrow excavation placement Sta. 170+50 RT.- 257+62 RT. | 6d | 2024-04-22 A | 2024-04-30 A | S4.1020, S2B.1055.1 | 100% |  | 2024-05-22 | 2024-05-31 |  | 52,901.05 | 58,500 |
| S4.1010 |  | Unclassified excavation Sta. 170+50 LT.- 257+62 LT. | 6d | 2024-07-22 A | 2024-07-26 A | S4.1065 | 100% |  | 2025-04-11 | 2025-04-22 |  | 25,593.75 | 20,426.27 |
| S4.1015 |  | Borrow excavation placement Sta. 170+50 LT.- 257+62 LT. | 4d | 2024-07-29 A | 2024-07-31 A | S4.1010 | 100% |  | 2025-04-23 | 2025-04-28 |  | 52,901.05 | 29,514.65 |
| S4.1030 |  | Rip rap ditchlines Sta. 237+55 LT.- 257+62 LT. | 6d | 2024-08-02 A | 2024-08-07 A | S4.1015 | 100% |  | 2024-08-02 | 2024-08-09 |  | 20,551.04 | 16,300 |
| S4.1080 |  | Sediment dam construction #2 Sta. 247+50 RT. | 2d | 2025-05-29 A | 2025-05-29 A | S2.1075 | 100% |  | 2025-07-01 | 2025-07-07 |  | 44,474.5 |  |
| S4.1090 |  | Sediment dam construction #5 Sta. 257+53 RT. | 1d | 2025-05-30 A | 2025-05-30 A | S4.1080 | 100% |  | 2025-07-16 | 2025-07-16 |  | 23,561.04 | 7,645.72 |
| S4.1045 |  | 10' Shared use path to include GABC base course Sta. 170+50 LT.- 257+62 LT. | 8d | 2025-06-16 A | 2025-07-15 | S4.1090 | 60% | 8d | 2025-06-16 | 2025-06-25 |  | 70,977.5 | 750 |
| S4.1025 |  | Sediment dam construction #3 248+75 LT. | 1d | 2025-07-01 | 2025-07-01 | S4.1020 |  |  |  |  |  | 20,551.04 |  |
| S4.1035 |  | Sediment dam construction #5 Sta. 257+62 LT | 1d | 2025-07-07 | 2025-07-07 | S4.1030, S4.1025 |  |  |  |  |  |  |  |
| S4.1040 |  | Fine grade Sta. 170+50 LT.- 257+62 LT. | 8d | 2025-07-08 | 2025-07-17 | S4.1035 |  |  |  |  |  | 13,138.85 |  |
| S4.1050 |  | HMA Base Type A Sta. 170+50 LT.- 257+62 LT. (where directed) | 5d | 2025-07-18 | 2025-07-24 | S4.1045, S4.1040 |  |  |  |  |  | 65,415 |  |
| S4.1055 |  | HMA intermediate Type B Sta. 170+50 LT.- 257+62 LT. (where directed) | 5d | 2025-07-25 | 2025-07-31 | S4.1050 |  |  |  |  |  | 65,415 |  |
| S4.1060 |  | Permanent grassing shoulders, ditches, and slopes Sta. 170+50 LT.- 257+62 LT. | 3d | 2025-08-01 | 2025-08-05 | S4.1055 |  |  |  |  |  | 7,500 |  |
| S4.1070 |  | Storm drainage DP-148, 147, 146, 131, 145, 135, 136, 137, 138, 139, 140 Sta. 239+00 RT.- 256+55 RT. | 5d | 2025-08-06 | 2025-08-12 | S4.1065, S4.1060 |  |  |  |  |  | 5,355 |  |
| S4.1075 |  | Fine grade shoulders/ditches Sta. 170+50 RT.- 257+62 RT. | 5d | 2025-08-13 | 2025-08-19 | S4.1070 |  |  |  |  |  | 13,138.85 |  |
| S4.1085 |  | Rip rap ditchlines Sta. 250+00 RT.- 257+10 RT. | 6d | 2025-08-20 | 2025-08-27 | S4.1080, S4.1075 |  |  |  |  |  | 20,551.04 |  |
| S4.1095 |  | Permanent grassing shoulders, ditches, and slopes 170+50 RT.- 257+62 RT. | 2d | 2025-08-28 | 2025-09-02 | S4.1090, S4.1085 |  |  |  |  |  | 9,060 |  |
| S4.1100 |  | HMA Base Type A Sta. 170+50 RT.- 257+62 RT. (where directed) | 5d | 2025-09-03 | 2025-09-09 | S4.1095 |  |  |  |  |  | 66,150 |  |
| S4.1105 |  | HMA Intermediate Type B Sta. 170+50 RT.- 257+62 RT. (where directed) | 5d | 2025-09-10 | 2025-09-16 | S4.1100 |  |  |  |  |  | 66,150 |  |
| S4.1110 |  | Final Line Striping - PROJECT WIDE | 4d | 2025-09-17 | 2025-09-22 | S4.1105 |  |  |  |  | SCDOT- Thermo Restrictions | 90,039.25 |  |
| S4.1005 |  | Asphalt pavement removal where directed Sta. 170+50 LT.- 257+62 LT. | 4d | 2026-04-08 | 2026-04-13 | S2B.1220 |  |  |  |  |  | 25,593.75 |  |

Notes:
- S2B.1220: Expenses: (New Expense Item)21; (New Expense Item)31; (New Expense Item)41; (New Expense Item)51; (New Expense Item)61; (New Expense Item)71; (New Expense Item)81; (New Expense Item)91; (New Expense Item)
- S4.1020: Expenses: (New Expense Item); (New Expense Item)1
- S4.1065: Expenses: (New Expense Item); (New Expense Item)1
- S4.1010: Expenses: (New Expense Item)
- S4.1015: Expenses: (New Expense Item); (New Expense Item)1
- S4.1030: Expenses: (New Expense Item)
- S4.1080: Expenses: (New Expense Item)
- S4.1090: Expenses: (New Expense Item)1; (New Expense Item)
- S4.1045: Expenses: (New Expense Item); (New Expense Item)1; (New Expense Item)2; (New Expense Item)3; (New Expense Item)4; (New Expense Item)5
- S4.1025: Expenses: (New Expense Item)
- S4.1040: Expenses: (New Expense Item)
- S4.1050: Expenses: (New Expense Item)
- S4.1055: Expenses: (New Expense Item)
- S4.1060: Expenses: (New Expense Item)
- S4.1070: Expenses: (New Expense Item)
- S4.1075: Expenses: (New Expense Item)
- S4.1085: Expenses: (New Expense Item)
- S4.1095: Expenses: (New Expense Item); (New Expense Item)1
- S4.1100: Expenses: (New Expense Item)
- S4.1105: Expenses: (New Expense Item)
- S4.1110: Expenses: (New Expense Item)2; (New Expense Item)3; (New Expense Item)4; (New Expense Item)5; (New Expense Item)6; (New Expense Item)7; (New Expense Item)8; (New Expense Item)9; (New Expense Item); (New Expense Item)1; (New Expense Item)10; (New Expense Item)11; (New Expense Item)12; (New Expense Item)13; (New Expense Item)14; (New Expense Item)15; (New Expense Item)16; (New Expense Item)17; (New Expense Item)18; (New Expense Item)19; (New Expense Item)20; (New Expense Item)21; (New Expense Item)22; (New Expense Item)23
- S4.1005: Expenses: (New Expense Item)

| ID | WBS | Activity | Duration | Start | Finish | Predecessors | Complete | Planned start | Planned finish | Cost | Actual cost |
| --- | --- | --- | --- | --- | --- | --- | --- | --- | --- | --- | --- |
|  | 6 | **Stage 5** |  | 2022-12-27 | 2026-04-16 |  |  |  |  |  |  |
| S5.1015 |  | Unclassified excavation Sta. 257+62 to 270+50.83 | 10d | 2022-12-27 A | 2022-12-30 A | S1.1255 | 100% | 2022-12-14 | 2023-01-06 | 54,921.9 | 254,851.5 |
| S5.1020 |  | Borrow excavation placement Sta. 257+62 to 270+50.83 EAST | 10d | 2023-06-20 A | 2023-07-07 A | S5.1015 | 100% | 2023-07-19 | 2023-08-01 | 69,414.2 | 72,488.24 |
| S5.1020.1 |  | Borrow excavation placement Sta. 257+62 to 270+50.83 WEST | 5d | 2024-06-17 A | 2024-07-10 A | S5.1020 | 100% | 2024-06-03 | 2024-06-07 |  |  |
| S5.1010 |  | Asphalt pavement removal where directed Sta. 257+62 to 270+50.83 | 4d | 2024-06-21 A | 2024-06-28 A | S5.1020 | 100% | 2024-06-03 | 2024-06-06 | 25,593.75 | 13,310.52 |
| S5.1045 |  | DP 141, 142 | 1d | 2024-07-22 A | 2024-07-26 A | S5.1020.1 | 100% | 2026-01-13 | 2026-01-13 | 5,355 |  |
| S5.1050 |  | Rip rap ditchlines Sta. 267+50 to 269+50 LT | 3d | 2024-07-22 A | 2024-07-26 A | S5.1020.1 | 100% | 2024-07-23 | 2024-07-25 | 20,551.04 | 22,480.96 |
| S5.1025 |  | OP 605, 607 | 1d | 2025-05-01 A | 2025-05-07 A | S5.1010, S5.1020.1 | 100% | 2026-03-04 | 2026-03-04 | 5,258 | 5,258 |
| S5.1030 |  | CB 605, 607 | 1d | 2025-05-01 A | 2025-05-07 A | S5.1025 | 100% | 2026-03-05 | 2026-03-05 | 10,516 | 5,258 |
| S5.1035 |  | Rip Rap outlet protection Sta. 260+80 LT. | 1d | 2025-05-08 A | 2025-05-09 A | S5.1030 | 100% | 2026-03-06 | 2026-03-06 | 20,551.04 | 8,150 |
| S5.1040 |  | Rip Rap outlet protection Sta. 260+80 LT. CONT. | 4d | 2025-05-08 A | 2025-05-09 A | S5.1035 | 100% | 2026-03-09 | 2026-03-12 | 20,551.04 | 8,150 |
|  | 1 | **Country Club Rd Driveway** |  | 2024-10-15 | 2026-04-16 |  |  |  |  |  |  |
| S5.1055 |  | OP 602, 604, DP 143, DP 144 | 4d | 2024-10-15 A | 2024-10-21 A | S5.1050 | 100% | 2026-01-14 | 2026-01-19 | 22,174.4 | 20,516.4 |
| S5.1060 |  | NP 601, 603 | 2d | 2024-10-15 A | 2024-10-21 A | S5.1055 | 100% | 2026-01-20 | 2026-01-21 | 44,805.9 | 3,076.8 |
| S5.1065 |  | Rip Rap outlet protection Sta. 503, 504, 507 LT. | 2d | 2024-10-22 A | 2024-10-25 A | S5.1060 | 100% | 2026-01-22 | 2026-01-23 | 20,551.04 | 1,695.2 |
| S5.1070 |  | Rip rap ditchlines Sta. 704+50 to 706 LT "Shared Path" | 2d | 2024-10-22 A | 2024-10-25 A | S5.1065 | 100% | 2026-01-26 | 2026-01-27 | 20,551.04 | 163 |
| S5.1075 |  | Perm. Concrete Bollards | 3d | 2026-04-14 | 2026-04-16 | S5.1070, S4.1005 |  |  |  | 30,000 |  |
|  | 2 | **Bridge Const. Stage 1 IPC Structures** |  | 2023-08-07 | 2024-09-11 |  |  |  |  |  |  |
| S5.1080 |  | Signage - MOT- STAGE 1 | 2d | 2023-08-07 A | 2023-08-08 A | S5.1020 | 100% | 2023-09-19 | 2023-09-20 | 1,957.5 | 2,809 |
| S5.1100 |  | Install any drainage and ditches | 8d | 2023-08-14 A | 2023-08-18 A | S5.1080, S5.1085 | 100% | 2023-10-13 | 2023-10-24 | 20,551.04 | 14,752.32 |
| S5.1190 |  | Bent 3 Drilled Piers 3 out of 5 | 10d | 2023-08-24 A | 2023-10-05 A | S5.1100 | 100% | 2023-11-08 | 2023-11-21 | 186,414.88 | 214,580.2 |
| S5.1180 |  | Bent 2 Drilled Piers 3 out of 5 | 10d | 2023-09-20 A | 2023-10-11 A | S5.1100, S5.1190 SS | 100% | 2023-11-07 | 2023-11-20 | 181,414.88 | 163,765.5 |
| S5.1240 |  | Bent 2 Rebar & Concrete | 10d | 2023-12-15 A | 2023-12-22 A | S5.1180 | 100% | 2024-01-09 | 2024-01-22 | 46,804.5 | 67,500 |
| S5.1250 |  | Bent 3 Rebar & Concrete | 10d | 2024-01-08 A | 2024-01-15 A | S5.1180, S5.1240 | 100% | 2024-01-23 | 2024-02-05 | 46,804.5 | 80,325 |
| S5.1200 |  | Endbent 1 Piles | 3d | 2024-01-23 A | 2024-01-23 A | S5.1180 | 100% | 2024-01-04 | 2024-01-08 | 59,893.75 | 78,436.15 |
| S5.1210 |  | Stage 5 Phase 3 Temp Shoring at Bridge | 4d | 2024-01-24 A | 2024-01-24 A | S5.1200 | 100% | 2024-01-09 | 2024-01-12 | 79,550 | 268,660 |
| S5.1230 |  | Endbent 1 Rebar & Concrete | 8d | 2024-01-25 A | 2024-02-08 A | S5.1210 | 100% | 2024-01-18 | 2024-01-29 | 46,804.5 | 32,400 |
| S5.1270 |  | Set Beams & Diaphragms | 5d | 2024-02-05 A | 2024-03-11 A | S5.1210 | 100% | 2024-03-01 | 2024-03-07 | 107,076 | 143,321.5 |
| S5.1220 |  | Endbent 4 Piles | 3d | 2024-02-15 A | 2024-02-16 A | S5.1210, S5.1230 | 100% | 2024-02-01 | 2024-02-05 | 59,893.75 | 84,029.15 |
| S5.1260 |  | Endbent 4 Rebar & Concrete | 8d | 2024-02-26 A | 2024-03-04 A | S5.1250 | 100% | 2024-02-20 | 2024-02-29 | 46,804.5 | 34,020 |
| S5.1280 |  | OH Jacks & Forms | 8d | 2024-03-12 A | 2024-03-22 A | S5.1270 | 100% | 2024-03-29 | 2024-04-09 | 20,297.55 | 17,500 |
| S5.1290 |  | Integral Bent Forms | 9d | 2024-03-12 A | 2024-03-28 A | S5.1280 | 100% | 2024-04-10 | 2024-04-22 | 108,053.55 | 55,497.43 |
| S5.1300 |  | SIP Decking | 3d | 2024-03-28 A | 2024-03-29 A | S5.1290 | 100% | 2024-04-23 | 2024-04-25 | 82,131.05 | 87,258 |
| S5.1310 |  | Form Edges & Headers | 4d | 2024-03-28 A | 2024-03-29 A | S5.1300 | 100% | 2024-04-26 | 2024-05-01 | 67,102.05 | 28,145.75 |
| S5.1320 |  | Deck Rebar | 3d | 2024-04-12 A | 2024-04-17 A | S5.1310 | 100% | 2024-04-15 | 2024-04-17 | 54,807.02 | 51,911.3 |
| S5.1330 |  | Setup & Pour Deck & Cure | 10d | 2024-04-18 A | 2024-04-24 A | S5.1320 | 100% | 2024-04-18 | 2024-05-01 | 46,804.5 | 226,800 |
| S5.1340 |  | Waterproofing & Backfilling | 4d | 2024-04-29 A | 2024-04-30 A | S5.1330 | 100% | 2024-05-02 | 2024-05-07 | 52,571.25 | 37,617.58 |
| S5.1005 |  | Install Temporary Shoring at Bridge Location | 5d | 2024-04-30 A | 2024-04-30 A | S5.1380 | 100% | 2025-02-03 | 2025-02-07 |  |  |
| S5.1361 |  | 36" RCP at Bridge | 5d | 2024-05-13 A | 2024-05-17 A | S5.1340 | 100% | 2024-06-03 | 2024-06-07 | 40,285.68 | 16,756.38 |
| S5.1350 |  | Approach Slabs EAST SIDE | 5d | 2024-05-28 A | 2024-05-30 A | S5.1340 | 100% | 2024-05-01 | 2024-05-07 | 67,084.55 | 78,668.75 |
| S5.1351 |  | Approach Slabs WEST SIDE | 5d | 2024-06-25 A | 2024-06-28 A | S5.1350 | 100% | 2024-06-03 | 2024-06-07 |  |  |
| S5.1360 |  | Barrier Rail - Slip Form | 4d | 2024-07-15 A | 2024-07-16 A | S5.1350, S5.1351, S5.1361 | 100% | 2024-07-01 | 2024-07-09 | 37,499.5 | 37,499.5 |
| S5.1390 |  | Install Guardrail 1 | 5d | 2024-07-24 A | 2024-07-24 A | S5.1380 | 100% | 2024-08-12 | 2024-08-16 | 12,493.5 | 9,429 |
| S5.1370 |  | Temp Barrier Rail | 2d | 2024-07-31 A | 2024-07-31 A | S5.1360 | 100% | 2024-07-10 | 2024-07-11 | 1,887 | 505.92 |
| S5.1380 |  | Wreck OH & Form | 3d | 2024-07-31 A | 2024-07-31 A | S5.1370 | 100% | 2024-07-12 | 2024-07-16 | 46,804.5 | 37,395 |
| S5.1105 |  | Signage - MOT- STAGE 2 | 2d | 2024-08-02 A | 2024-08-03 A | S5.1390 | 100% | 2025-06-13 | 2025-06-16 | 6,136 | 252 |
| S5.1090 |  | Construct Temporary Pavement and Roadway from bridge to relocated S-47 | 7d | 2024-09-03 A | 2024-09-06 A | S5.1005, S5.1230 | 100% | 2025-02-10 | 2025-02-18 | 406,793.9 | 96,878.36 |
| S5.1181 |  | Bent 2 Drilled Piers - Remaining 2 Shafts | 5d | 2024-09-03 A | 2024-09-06 A | S5.1250, S5.1220, S5.1260 | 100% | 2025-02-03 | 2025-02-07 |  |  |
| S5.1191 |  | Bent 3 Drilled Piers - Remaining 2 Shafts | 5d | 2024-09-03 A | 2024-09-06 A | S5.1181 | 100% | 2025-02-10 | 2025-02-14 |  |  |
| S5.1095 |  | Construct intersection with S-47 and Country Club Road Driveway | 6d | 2024-09-06 A | 2024-09-11 A | S5.1090, S5.1191 | 100% | 2025-02-03 | 2025-02-10 | 406,808.55 | 87,803.45 |

Notes:
- S5.1015: Expenses: (New Expense Item)
- S5.1020: Expenses: (New Expense Item)2; (New Expense Item); (New Expense Item)1
- S5.1010: Expenses: (New Expense Item)
- S5.1045: Expenses: (New Expense Item)
- S5.1050: Expenses: (New Expense Item)
- S5.1025: Expenses: (New Expense Item)
- S5.1030: Expenses: (New Expense Item)
- S5.1035: Expenses: (New Expense Item)
- S5.1040: Expenses: (New Expense Item)
- S5.1055: Expenses: (New Expense Item); (New Expense Item)1
- S5.1060: Expenses: (New Expense Item)
- S5.1065: Expenses: (New Expense Item)
- S5.1070: Expenses: (New Expense Item)
- S5.1075: Expenses: (New Expense Item)
- S5.1080: Expenses: (New Expense Item); (New Expense Item)2; (New Expense Item)1
- S5.1100: Expenses: (New Expense Item)
- S5.1190: Expenses: (New Expense Item)1; (New Expense Item)2; (New Expense Item)3; (New Expense Item)4; (New Expense Item)
- S5.1180: Expenses: (New Expense Item)1; (New Expense Item)2; (New Expense Item)3; (New Expense Item)4
- S5.1240: Expenses: (New Expense Item)
- S5.1250: Expenses: (New Expense Item)
- S5.1200: Expenses: (New Expense Item); (New Expense Item)1; (New Expense Item)2
- S5.1210: Expenses: (New Expense Item); (New Expense Item)1
- S5.1230: Expenses: (New Expense Item)
- S5.1270: Expenses: (New Expense Item); (New Expense Item)1
- S5.1220: Expenses: (New Expense Item); (New Expense Item)1; (New Expense Item)2
- S5.1260: Expenses: (New Expense Item)
- S5.1280: Expenses: (New Expense Item)
- S5.1290: Expenses: (New Expense Item); (New Expense Item)1
- S5.1300: Expenses: (New Expense Item)3; (New Expense Item); (New Expense Item)1; (New Expense Item)2; (New Expense Item)11; (New Expense Item)21
- S5.1310: Expenses: (New Expense Item); (New Expense Item)1
- S5.1320: Expenses: (New Expense Item); (New Expense Item)1
- S5.1330: Expenses: (New Expense Item)
- S5.1340: Expenses: (New Expense Item); (New Expense Item)1; (New Expense Item)2; (New Expense Item)4; (New Expense Item)5; CO#6-2; CO#6-3; CO#6-6
- S5.1005: Expenses: (New Expense Item)
- S5.1361: Expenses: (New Expense Item)
- S5.1350: Expenses: (New Expense Item); (New Expense Item)1
- S5.1360: Expenses: (New Expense Item)1; (New Expense Item)2
- S5.1390: Expenses: (New Expense Item); (New Expense Item)1; (New Expense Item)2
- S5.1370: Expenses: (New Expense Item)
- S5.1380: Expenses: (New Expense Item)
- S5.1105: Expenses: (New Expense Item); (New Expense Item)1; CO#6; CO#6 -1; CO#6-4; CO#6-5; CO#6-7
- S5.1090: Expenses: (New Expense Item); (New Expense Item)1; (New Expense Item)2; (New Expense Item)3
- S5.1095: Expenses: (New Expense Item); (New Expense Item)1; (New Expense Item)2; (New Expense Item)3

| ID | WBS | Activity | Duration | Start | Finish | Predecessors | Complete | Remaining | Planned start | Planned finish | Cost | Actual cost |
| --- | --- | --- | --- | --- | --- | --- | --- | --- | --- | --- | --- | --- |
|  | 3 | **Bridge Const. Stage 2 IPC Structures** |  | 2023-10-05 | 2025-07-14 |  |  |  |  |  |  |  |
| S5.1185 |  | Bent 3 Drilled Piers - STAGE 2 | 10d | 2023-10-05 A | 2023-10-05 A | S5.1190 | 100% |  | 2024-06-04 | 2024-06-17 | 205,321.9 | 286,621.35 |
| S5.1235 |  | Bent 3 Rebar & Concrete - STAGE 2 | 8d | 2024-01-15 A | 2024-01-15 A | S5.1250 | 100% |  | 2024-01-30 | 2024-02-08 | 67,102.05 | 56,600 |
| S5.1245 |  | Endbent 4 Rebar & Concrete - STAGE 2 | 6d | 2024-01-15 A | 2024-01-15 A | S5.1235 | 100% |  | 2024-04-23 | 2024-04-30 | 67,102.05 | 61,974.5 |
| S5.1205 |  | Endbent 4 Piles - STAGE 2 | 2d | 2024-02-15 A | 2024-02-15 A | S5.1235 | 100% |  | 2024-02-05 | 2024-02-06 | 28,368.75 | 30,177.55 |
| S5.1255 |  | Set Beams & Diaphragms - STAGE 2 | 4d | 2024-03-04 A | 2024-03-04 A | S5.1205 | 100% |  | 2024-04-04 | 2024-04-09 | 88,209.6 | 194,033.58 |
| S5.1110 |  | Temporary Detour - STAGE 2 | 2d | 2024-06-17 A | 2024-06-17 A | S5.1105 | 100% |  | 2025-06-17 | 2025-06-18 | 637.5 |  |
| S5.1115 |  | Remove Temporary Shoring | 2d | 2024-07-29 A | 2024-07-29 A | S5.1110 | 100% |  | 2025-06-19 | 2025-06-20 | 48,650 |  |
| S5.1120 |  | Construct ALL Temporary and Permanent Pavement, Approach Slabs | 5d | 2024-07-30 A | 2024-07-30 A | S5.1115 | 100% |  | 2025-06-23 | 2025-06-27 | 406,764 | 71,703.44 |
| S5.1125 |  | Install Temporary Barrier Wall | 1d | 2024-07-31 A | 2024-07-31 A | S5.1255 | 100% |  | 2024-09-05 | 2024-09-05 | 35,489.21 | 12,437.5 |
| S5.1195 |  | Endbent 1 Piles - STAGE 2 | 2d | 2024-08-12 A | 2024-08-12 A | S5.1185, S5.1205 | 100% |  | 2025-02-03 | 2025-02-04 | 56,368.75 |  |
| S5.1215 |  | Endbent 1 Rebar & Concrete - STAGE 2 | 6d | 2024-08-13 A | 2024-09-04 A | S5.1195 | 100% |  | 2025-02-05 | 2025-02-12 | 46,804.5 | 147,150 |
| S5.1225 |  | Bent 2 Rebar & Concrete - STAGE 2 | 8d | 2024-08-13 A | 2024-09-04 A | S5.1215 | 100% |  | 2025-02-13 | 2025-02-24 | 67,102.05 | 82,283.5 |
| S5.1175 |  | Bent 2 Drilled Piers - STAGE 2 | 10d | 2024-09-03 A | 2024-09-06 A | S5.1125, S5.1120 | 100% |  | 2024-09-03 | 2024-09-16 | 332,119.05 | 100,356.3 |
| S5.1265 |  | OH Jacks & Forms - STAGE 2 | 8d | 2024-12-09 A | 2024-12-10 A | S5.1255, S5.1245, S5.1225 | 100% |  | 2025-02-25 | 2025-03-06 | 67,102.05 | 15,250 |
| S5.1275 |  | Integral Bent Forms - STAGE 2 | 6d | 2024-12-10 A | 2024-12-11 A | S5.1265 | 100% |  | 2025-03-07 | 2025-03-14 | 87,756 |  |
| S5.1285 |  | SIP Decking - STAGE 2 | 2d | 2024-12-11 A | 2024-12-12 A | S5.1275 | 100% |  | 2025-03-17 | 2025-03-18 | 67,102.05 | 15,250 |
| S5.1295 |  | Form Edges & Headers - STAGE 2 | 3d | 2024-12-12 A | 2024-12-13 A | S5.1285 | 100% |  | 2025-03-19 | 2025-03-21 | 67,102.05 | 15,250 |
| S5.1305 |  | Deck Rebar - STAGE 2 | 2d | 2024-12-13 A | 2025-03-07 A | S5.1295, S5.1095 | 100% |  | 2025-03-03 | 2025-03-04 | 20,297.55 | 18,798.5 |
| S5.1315 |  | Set up & Pour Deck & Cure - STAGE 2 | 10d | 2025-03-10 A | 2025-03-12 A | S5.1305 | 100% |  | 2025-03-05 | 2025-03-18 | 46,804.5 | 13,500 |
| S5.1325 |  | Form Closure Pour, Pour & Cure - STAGE 2 | 10d | 2025-03-24 A | 2025-03-28 A | S5.1315 | 100% |  | 2025-03-19 | 2025-04-01 | 55,204.5 | 16,800 |
| S5.1365 |  | Barrier Rail - Picture Frame - STAGE 2 | 7d | 2025-03-24 A | 2025-03-28 A | S5.1315 | 100% |  | 2025-04-22 | 2025-04-30 | 109,934 | 49,634 |
| S5.1375 |  | Wreak OH & Forms - STAGE 2 | 3d | 2025-04-01 A | 2025-05-30 A | S5.1365 | 100% |  | 2025-05-01 | 2025-05-05 | 46,804.5 | 27,000 |
| S5.1335 |  | Waterproofing & Backfilling - STAGE 2 | 4d | 2025-04-21 A | 2025-04-25 A | S5.1325 | 100% |  | 2025-04-01 | 2025-04-04 | 24,150 | 1,850 |
| S5.1345 |  | Approach Slabs - STAGE 2 | 4d | 2025-06-01 A | 2025-06-02 A | S5.1335 | 100% |  | 2025-06-02 | 2025-06-05 | 67,084.55 | 17,000 |
| S5.1355 |  | Sidewalk - STAGE 2 | 5d | 2025-06-03 A | 2025-06-06 A | S5.1345 | 100% |  | 2025-06-06 | 2025-06-12 | 25,069.25 | 20,725 |
| S5.1415 |  | Cleanup & Demobilize | 5d | 2025-06-18 A | 2025-07-10 | S5.1355 |  | 5d | 2025-06-06 | 2025-06-12 | 122,207.4 |  |
| S5.1395 |  | Profile Grind Deck | 2d | 2025-07-01 | 2025-07-07 | S5.1375 |  |  |  |  | 6,106.5 |  |
| S5.1405 |  | Grooving | 2d | 2025-07-08 | 2025-07-09 | S5.1395 |  |  |  |  | 6,106.5 |  |
| S5.1420 |  | Install Guardrail 2 | 2d | 2025-07-11 | 2025-07-14 | S5.1415, S5.1355, S5.1405 |  |  |  |  | 8,347.5 |  |

Notes:
- S5.1185: Expenses: (New Expense Item)11; (New Expense Item)1; (New Expense Item)2; (New Expense Item)3; (New Expense Item)4; (New Expense Item)
- S5.1235: Expenses: (New Expense Item); (New Expense Item)1
- S5.1245: Expenses: (New Expense Item); (New Expense Item)1
- S5.1205: Expenses: (New Expense Item)
- S5.1255: Expenses: (New Expense Item); (New Expense Item)1
- S5.1110: Expenses: (New Expense Item)
- S5.1115: Expenses: (New Expense Item)
- S5.1120: Expenses: (New Expense Item); (New Expense Item)1; (New Expense Item)2; (New Expense Item)3
- S5.1125: Expenses: (New Expense Item)
- S5.1195: Expenses: (New Expense Item); (New Expense Item)1
- S5.1215: Expenses: (New Expense Item)1
- S5.1225: Expenses: (New Expense Item); (New Expense Item)1
- S5.1175: Expenses: (New Expense Item); (New Expense Item)2; (New Expense Item)3; (New Expense Item)4; (New Expense Item)5; (New Expense Item)6; (New Expense Item)7; (New Expense Item)8; (New Expense Item)9; (New Expense Item)10; (New Expense Item)11; (New Expense Item)12; (New Expense Item)13; (New Expense Item)14; (New Expense Item)15; (New Expense Item)16; (New Expense Item)17; (New Expense Item)18; (New Expense Item)19; (New Expense Item)20; (New Expense Item)21; (New Expense Item)22; (New Expense Item)23; (New Expense Item)24; (New Expense Item)25; (New Expense Item)26; (New Expense Item)27; (New Expense Item)28; (New Expense Item)1; (New Expense Item)29; (New Expense Item)31; (New Expense Item)41; CO #9
- S5.1265: Expenses: (New Expense Item); (New Expense Item)1
- S5.1275: Expenses: (New Expense Item)
- S5.1285: Expenses: (New Expense Item); (New Expense Item)1
- S5.1295: Expenses: (New Expense Item); (New Expense Item)1
- S5.1305: Expenses: (New Expense Item)
- S5.1315: Expenses: (New Expense Item)
- S5.1325: Expenses: (New Expense Item)1; (New Expense Item)
- S5.1365: Expenses: (New Expense Item); (New Expense Item)1; (New Expense Item)2
- S5.1375: Expenses: (New Expense Item)
- S5.1335: Expenses: (New Expense Item)3; (New Expense Item)4; (New Expense Item)
- S5.1345: Expenses: (New Expense Item); (New Expense Item)1
- S5.1355: Expenses: (New Expense Item); (New Expense Item)1; (New Expense Item)2
- S5.1415: Expenses: (New Expense Item)1
- S5.1395: Expenses: (New Expense Item)
- S5.1405: Expenses: (New Expense Item)
- S5.1420: Expenses: (New Expense Item); (New Expense Item)1

| ID | WBS | Activity | Duration | Start | Finish | Predecessors | Complete | Remaining | Planned start | Planned finish | Calendar | Cost | Actual cost |
| --- | --- | --- | --- | --- | --- | --- | --- | --- | --- | --- | --- | --- | --- |
|  | 4 | **Bridge Const. Stage 3 IPC Structures** |  | 2025-06-16 | 2025-09-05 |  |  |  |  |  |  |  |  |
| S5.1130 |  | Complete Roadway Tie-ins | 5d | 2025-06-16 A | 2025-06-20 A | S5.1355 | 100% |  | 2025-06-17 | 2025-06-23 |  | 66,150 | 18,375 |
| S5.1145 |  | Remove Existing Bridge | 12d | 2025-06-18 A | 2025-07-21 | S5.1140 |  | 12d | 2025-10-03 | 2025-10-20 |  | 38,000 |  |
| S5.1135 |  | Finish Drainage and Ditches | 5d | 2025-06-23 A | 2025-06-25 A | S5.1130 | 100% |  | 2025-06-24 | 2025-06-30 |  |  |  |
| S5.1140 |  | Finish Bridge Construction | 60d | 2025-06-25 A | 2025-06-27 A | S5.1130 | 100% |  | 2025-07-09 | 2025-10-02 |  | 35,632.75 | 4,221 |
| S5.1136 |  | Fertilizer (Nitrogen) | 3d | 2025-07-01 | 2025-07-08 | S5.1135 |  |  |  |  |  | 14,622.5 |  |
| S5.1150 |  | Final Grading Stage 5 | 6d | 2025-07-22 | 2025-07-29 | S5.1145, S5.1136 |  |  |  |  |  | 13,138.85 |  |
| S5.1151 |  | Clean Pipes | 3d | 2025-07-30 | 2025-08-01 | S5.1150 |  |  |  |  |  | 10,803.75 |  |
| S5.1155 |  | Final Cleanup/Demobilization | 5d | 2025-08-04 | 2025-08-08 | S5.1151 |  |  |  |  |  | 7,304 |  |
| S5.1160 |  | Final Surface overlay-Full Project | 15d | 2025-08-11 | 2025-09-02 | S5.1155 |  |  |  |  | SCDOT- Asphalt/Winter | 66,150 |  |
| S5.1170 |  | Remove Construction Signs | 3d | 2025-09-03 | 2025-09-05 | S5.1160 |  |  |  |  |  | 637.5 |  |
|  | 4251511.3 | **Deleted Activities** |  | 2023-08-01 | 2023-08-01 |  |  |  |  |  |  |  |  |
| S5.1085 |  | DELETED: Temporary Detour - STAGE 1 | 0d | 2023-08-01 A | 2023-08-01 A | S5.1080 | 100% |  | 2024-02-01 | 2024-02-01 |  |  |  |

Notes:
- S5.1130: Expenses: (New Expense Item)
- S5.1145: Expenses: (New Expense Item)
- S5.1140: Expenses: (New Expense Item)2; (New Expense Item); (New Expense Item)1
- S5.1136: Expenses: (New Expense Item); (New Expense Item)1; (New Expense Item)2; (New Expense Item)3; (New Expense Item)4; (New Expense Item)5; (New Expense Item)6
- S5.1150: Expenses: (New Expense Item)
- S5.1151: Expenses: (New Expense Item)2
- S5.1155: Expenses: (New Expense Item); (New Expense Item)1; (New Expense Item)2
- S5.1160: Expenses: (New Expense Item)
- S5.1170: Expenses: (New Expense Item)
