# 4386750u250601 - E. Red Bay Rd. over Turkey Creek

Schedule from Primavera P6, 2024-01-31 to 2025-09-03, data date 2025-06-01, A marks actual dates.

## Calendars

- Standard 5-Day Workweek w/ Basic Holidays: Mon-Fri 08:00-11:59, 13:00-16:59; Sat-Sun off. Exceptions (off unless hours are given): 2024-05-27, 2024-07-04, 2024-09-02, 2024-11-28 to 2024-11-29, 2024-12-23 to 2024-12-25, 2025-01-01, 2025-05-26, 2025-07-04, 2025-09-01.
- 7-Day Workweek: Mon-Sun 08:00-11:59, 13:00-16:59. Exceptions (off unless hours are given): 2024-03-26 08:00-11:59, 13:00-16:59.
- Winter Asphalt: Mon-Fri 08:00-11:59, 13:00-16:59; Sat-Sun off. Exceptions (off unless hours are given): 2024-05-06, 2024-07-04, 2024-09-02, 2024-11-28 to 2024-11-29, 2024-12-02 to 2024-12-06, 2024-12-09 to 2024-12-13, 2024-12-16 to 2024-12-20, 2024-12-23 to 2024-12-27, 2024-12-30 to 2025-01-03, 2025-01-06 to 2025-01-10, 2025-01-13 to 2025-01-17, 2025-01-20 to 2025-01-24, 2025-01-27 to 2025-01-31, 2025-02-03 to 2025-02-07, 2025-02-10 to 2025-02-14, 2025-02-17 to 2025-02-21, 2025-02-24 to 2025-02-28, 2025-05-26, 2025-07-04, 2025-09-01.
- Winter Thermo: Mon-Fri 08:00-11:59, 13:00-16:59; Sat-Sun off. Exceptions (off unless hours are given): 2024-05-27, 2024-07-04, 2024-09-02, 2024-11-28 to 2024-11-29, 2024-12-16 to 2024-12-20, 2024-12-23 to 2024-12-27, 2024-12-30 to 2025-01-03, 2025-01-06 to 2025-01-10, 2025-01-13 to 2025-01-17, 2025-01-20 to 2025-01-24, 2025-01-27 to 2025-01-31, 2025-02-03 to 2025-02-07, 2025-02-10 to 2025-02-14, 2025-02-17 to 2025-02-21, 2025-02-24 to 2025-02-28, 2025-03-03 to 2025-03-07, 2025-03-10 to 2025-03-14, 2025-05-26, 2025-07-04, 2025-09-01.

## Schedule

| ID | WBS | Activity | Type | Duration | Start | Finish | Predecessors | Complete | Remaining | Planned start | Planned finish | Constraint | Calendar | Cost | Actual cost | Project |
| --- | --- | --- | --- | --- | --- | --- | --- | --- | --- | --- | --- | --- | --- | --- | --- | --- |
|  | Milestones | **Milestones** |  |  | 2024-01-31 | 2025-09-03 |  |  |  |  |  |  |  |  |  |  |
| M1000 |  | Award Date - 1/31/24 | milestone | 0d | 2024-01-31 A | 2024-01-31 A |  | 100% |  |  |  | start on or after 2024-01-31 |  |  |  | 4386750u250601 |
| M1010 |  | Contract Execution Date - 02/13/24 | milestone | 0d | 2024-02-13 A | 2024-02-13 A | M1000 | 100% |  |  |  | start on or after 2024-02-13 |  |  |  | 4386750u250601 |
| M1050 |  | Notice to Proceed | milestone | 0d | 2024-02-27 A | 2024-02-27 A | M1010 | 100% |  |  |  | start on or after 2024-02-27 | 7-Day Workweek |  |  | 4386750u250601 |
| M1020 |  | Insurance Renewal Date - 3/31/24 | milestone | 0d | 2024-03-31 A | 2024-03-31 A |  | 100% |  |  |  | finish on 2024-03-31 | 7-Day Workweek |  |  | 4386750u250601 |
| M1060 |  | Begin Work | milestone | 0d | 2024-05-27 A | 2024-05-27 A | A1010 | 100% |  | 2024-06-03 | 2024-06-03 |  |  |  |  | 4386750u250601 |
| M1070 |  | 2nd Mobilization Payment | milestone | 0d | 2024-06-06 A | 2024-06-06 A | A1010 FS+21d | 100% |  |  |  |  |  | 97,500 | 97,500 | 4386750u250601 |
| M1080 |  | Begin Bridge | milestone | 0d | 2024-09-04 A | 2024-09-04 A | A1500 SS | 100% |  | 2025-02-14 | 2025-02-14 |  |  |  |  | 4386750u250601 |
| M1030 |  | Insurance Renewal Date - 3/31/25 | milestone | 0d | 2025-03-31 A | 2025-03-31 A |  | 100% |  |  |  | finish on 2025-03-31 | 7-Day Workweek |  |  | 4386750u250601 |
| M1090 |  | Begin Paving | milestone | 0d | 2025-07-25 | 2025-07-25 | A1290 SS |  |  |  |  |  |  |  |  | 4386750u250601 |
| M1100 |  | Open New Bridge to Traffic | milestone | 0d | 2025-08-20 | 2025-08-20 | A1780, A1790 |  |  |  |  |  |  |  |  | 4386750u250601 |
| M1040 |  | Insurance Renewal Date - 3/31/26 | milestone | 0d | 2025-09-03 | 2025-09-03 |  |  |  |  |  | as late as possible | 7-Day Workweek |  |  | 4386750u250601 |
| M1110 |  | Substantial Completion | milestone | 0d | 2025-09-03 | 2025-09-03 | A1020 FF, A1040 FF, A1820 FF, M1090, M1080, A1780 FF, M1070, A1030 FF, M1100, A1830 FF, A1570 FF, A1050 FF, W1050 |  |  |  |  | finish on or before 2025-06-30 |  |  |  | 4386750u250601 |
| M1120 |  | As-Built CPM Schedule Submission | milestone | 0d | 2025-09-03 | 2025-09-03 | M1110 |  |  |  |  |  |  | 8,000 |  | 4386750u250601 |
| M1130 |  | Final Completion | milestone | 0d | 2025-09-03 | 2025-09-03 | M1120 |  |  |  |  |  |  |  |  | 4386750u250601 |
|  | General Conditions | **General Conditions** |  |  | 2024-04-02 | 2025-09-03 |  |  |  |  |  |  |  |  |  |  |
| A1000 |  | Baseline CPM Submission |  | 1d | 2024-04-02 A | 2024-06-13 A | M1010 | 100% |  | 2024-04-02 | 2024-04-02 | start on or after 2024-04-02 | 7-Day Workweek | 12,000 | 12,000 | 4386750u250601 |
| A1010 |  | Mobilization |  | 1d | 2024-05-07 A | 2024-05-07 A | M1050 SS, A1000 SS | 100% |  | 2024-05-02 | 2024-05-02 |  |  | 147,500 | 147,500 | 4386750u250601 |
| A1020 |  | Traffic Control | level of effort | 314d | 2024-05-07 A | 2025-09-03 | A1010 SS | 74% | 66d | 2024-05-02 | 2025-07-30 |  |  | 34,148.08 | 26,608 | 4386750u250601 |
| A1030 |  | Construction Stakes, Lines, & Grades | level of effort | 314d | 2024-05-07 A | 2025-09-03 | A1010 SS | 70% | 66d | 2024-05-02 | 2025-07-30 |  |  | 83,797.5 | 47,272.5 | 4386750u250601 |
| A1040 |  | Install/Maintain Erosion Control | level of effort | 314d | 2024-05-07 A | 2025-09-03 | A1010 SS | 70% | 66d | 2024-05-02 | 2025-07-30 |  |  | 132,872.4 | 118,047 | 4386750u250601 |
| A1060 |  | Install Perm Construction Signs |  | 1d | 2024-05-07 A | 2024-05-07 A | A1010 SS | 100% |  | 2024-05-02 | 2024-05-02 |  |  | 2,398.5 | 3,139.5 | 4386750u250601 |
| A1080 |  | Clearing & Grubbing |  | 10d | 2024-05-27 A | 2024-06-20 A | M1060 SS, A1060, A1000 FF | 100% |  | 2024-06-03 | 2024-06-14 |  |  | 142,000 | 145,360 | 4386750u250601 |
| A1085 |  | Clearing & Grubbing - High Street |  | 2d | 2024-06-17 A | 2024-06-20 A | A1080 FF | 100% |  | 2025-12-29 | 2025-12-30 |  |  | 32,000 |  | 4386750u250601 |
| A1070 |  | Bridge Mobilization |  | 5d | 2024-08-19 A | 2024-08-19 A | A1060 | 100% |  | 2024-08-01 | 2024-08-07 |  |  |  |  | 4386750u250601 |
| A1050 |  | Moving and Demo Items | level of effort | 194d | 2024-09-04 A | 2025-09-03 | A1380 SS | 70% | 66d | 2025-01-03 | 2025-10-06 |  |  | 169,714.4 | 156,201.48 | 4386750u250601 |

Notes:
- M1070: Expenses: Mobilization
- M1120: Expenses: CPM schedule - As-built
- A1000: Expenses: CPM schedule - baseline
- A1010: Expenses: Mobilization; Bonds/Insurance
- A1020: Expenses: 4" white solid fast dry paint; 4" yellow solid fast dry paint; 24" white solid fast dry paint; U-Section Posts - 3P; Type III Barricades; Type B Flashing lights; 4" white skips fast dry paint; Traffic Control
- A1030: Expenses: Utility Staking; Topographic Survey - CO; Construction S/L/G; ROW Plat; ROW Marker (Rebar and Cap)
- A1040: Expenses: Inlet Structure Filter Type F (weighted); Geotextile under RR Class 2; Temp barrier fence; Floating Turbidity Curtain; HECP Type 1; Replace/Repair SF; Inlet Structure Filter - Type D2; Removal of silt retained by SF; Filter Material - Type D2; Sediment tubes; Cleaining Inlet Structure Filters; Inlet Structure Filter Type F (non-weighted); Geogrid Reinforcement (Uniaxial); Macadam Base - CO; Stabilized Construc Entrance; Silt Fence; HECP Type 3; Selective Watering; Agricultural Granular Lime; Fertilizer (Potash); Fertilizer (Phosphoric Acid); Fertilizer (Nitrogen); Temporary Cover; Maintenance Stone; Rip Rap Class B; Temp EC Blanket; Agg underdrain w/ 4" perf pipe
- A1060: Expenses: Prm Const Signs (Barricade Mntd); Prm Const Signs (Ground Mntd)
- A1080: Expenses: Unclassified Excavation; Borrow Excavation; C/G in R/W
- A1085: Expenses: C/G in R/W; Unclassified Excavation; Borrow Excavation
- A1050: Expenses: R/D Existing CB; R/D Existing DI; R/D Existing Curb; R/D Existing Asphalt; Large water relocation; Variable Milling

| ID | WBS | Activity | Duration | Start | Finish | Predecessors | Complete | Remaining | Planned start | Planned finish | Calendar | Cost | Actual cost | Project |
| --- | --- | --- | --- | --- | --- | --- | --- | --- | --- | --- | --- | --- | --- | --- |
|  | Submittals | **Submittals** |  | 2024-06-18 | 2024-12-10 |  |  |  |  |  |  |  |  |  |
| S1030 |  | Prestressed Girders - Submittal (formerly Concrete Slab for Slopes) | 5d | 2024-06-18 A | 2024-06-18 A | A1010 SS | 100% |  | 2024-06-03 | 2024-06-07 |  |  |  | 4386750u250601 |
| S1040 |  | SCDOT Review/Approval - Prestressed Girders (formerly Concrete Slab for Slopes) | 15d | 2024-06-18 A | 2024-06-27 A | S1030 | 100% |  | 2024-06-10 | 2024-06-28 |  |  |  | 4386750u250601 |
| S1050 |  | Lead Time - Prestressed Girders (formerly Concrete Slab for Slopes) | 45d | 2024-07-01 A | 2024-12-10 A | S1040 | 100% |  | 2024-07-01 | 2024-09-03 |  |  |  | 4386750u250601 |
| S1000 |  | Helical Anchor Submittal | 5d | 2024-08-22 A | 2024-08-22 A | A1010 SS | 100% |  | 2024-08-01 | 2024-08-07 |  |  |  | 4386750u250601 |
| S1010 |  | SCDOT Review/Approval - Helical Anchor | 15d | 2024-08-23 A | 2024-08-23 A | S1000 | 100% |  | 2024-08-08 | 2024-08-28 |  |  |  | 4386750u250601 |
| S1020 |  | Lead Time - Helical Anchors | 25d | 2024-08-23 A | 2024-08-30 A | S1010 | 100% |  | 2024-08-29 | 2024-10-03 |  |  |  | 4386750u250601 |
|  | Utility | **Utility Relocations** |  | 2024-06-20 | 2025-07-22 |  |  |  |  |  |  |  |  |  |
| U1000 |  | Utility Relocation Window | 90d | 2024-06-20 A | 2024-09-17 A | A1080 | 100% |  | 2024-06-08 | 2024-09-05 | 7-Day Workweek |  |  | 4386750u250601 |
| U1010 |  | Utility Relocation - Duke Energy - Distribution | 90d | 2024-06-20 A | 2024-07-31 A | A1080 | 100% |  | 2024-06-08 | 2024-09-05 | 7-Day Workweek |  |  | 4386750u250601 |
| U1020 |  | Utility Relocation - Duke Energy - Transmission | 90d | 2024-06-20 A | 2024-07-31 A | A1080 | 100% |  | 2024-06-08 | 2024-09-05 | 7-Day Workweek |  |  | 4386750u250601 |
| U1030 |  | Utility Relocation - City of Sumter - Water/Sewer | 90d | 2024-06-20 A | 2024-06-28 A | A1080 | 100% |  | 2024-06-08 | 2024-09-05 | 7-Day Workweek |  |  | 4386750u250601 |
| U1040 |  | Utility Relocation - Dominion - Gas | 90d | 2024-06-20 A | 2024-10-19 A | A1080 | 100% |  | 2024-06-08 | 2024-09-05 | 7-Day Workweek |  |  | 4386750u250601 |
| U1050 |  | Utility Relocation - Farmers Telephone - Communications | 90d | 2024-06-20 A | 2024-07-31 A | A1080 | 100% |  | 2024-06-08 | 2024-09-05 | 7-Day Workweek |  |  | 4386750u250601 |
| U1070 |  | Utility Relocation - Spectrum/Charter - Communications | 90d | 2024-06-20 A | 2024-07-31 A | A1080 | 100% |  | 2024-06-08 | 2024-09-05 | 7-Day Workweek |  |  | 4386750u250601 |
| U1080 |  | Utility Relocation - CSX - Traffic | 90d | 2024-06-20 A | 2024-07-31 A | A1080 | 100% |  | 2024-06-08 | 2024-09-05 | 7-Day Workweek |  |  | 4386750u250601 |
| U1060 |  | Utility Relocation - Frontier Telephone - Communications | 90d | 2024-08-01 A | 2024-08-15 A | A1080 | 100% |  | 2024-06-08 | 2024-09-05 | 7-Day Workweek |  |  | 4386750u250601 |
| W1000 |  | Install Relocated Waterline - Directional Bore under creek | 8d | 2025-06-02 | 2025-06-11 | A1080, U1000, U1010, U1020, U1040, U1050, U1060, U1070, U1080, A1090 |  |  |  |  |  | 44,373 |  | 4386750u250601 |
| W1010 |  | Install Relocated Waterline - NE side of creek | 4d | 2025-06-12 | 2025-06-17 | W1000 |  |  |  |  |  | 88,746 |  | 4386750u250601 |
| W1020 |  | Install Relocated Waterline - NW side of creek | 6d | 2025-06-18 | 2025-06-25 | W1010 |  |  |  |  |  | 88,746 |  | 4386750u250601 |
| W1030 |  | Install Relocated Waterline - Crossing at 49+40 | 3d | 2025-06-26 | 2025-06-30 | W1020 |  |  |  |  |  | 44,373 |  | 4386750u250601 |
| W1040 |  | Install Relocated Waterline - South side of creek | 8d | 2025-07-01 | 2025-07-11 | W1030 |  |  |  |  |  | 88,746 |  | 4386750u250601 |
| W1050 |  | Waterline Testing and Tie-in | 7d | 2025-07-14 | 2025-07-22 | W1010, W1000, W1020, W1040, W1030 |  |  |  |  |  | 8,874.6 |  | 4386750u250601 |
|  | phase 1 | **Phase I - Construct E. Red Bay Rd. and Bridge** |  | 2024-09-04 | 2025-08-14 |  |  |  |  |  |  |  |  |  |
|  | Grading | **Grading Operations - E. Red Bay Rd.** |  | 2025-02-19 | 2025-08-13 |  |  |  |  |  |  |  |  |  |
| A1090 |  | Rough Grading - East side | 22d | 2025-02-19 A | 2025-03-04 A | U1000, U1010, U1020, U1040, U1050, U1060, U1070, U1080 | 100% |  | 2025-04-01 | 2025-04-30 |  | 208,640.01 | 216,230 | 4386750u250601 |
| A1100 |  | Settlement Period - East side | 50d | 2025-02-28 A | 2025-04-23 A | A1090 | 100% |  | 2025-03-08 | 2025-04-26 | 7-Day Workweek |  |  | 4386750u250601 |
| A1110 |  | Rough Grading - West side | 22d | 2025-03-10 A | 2025-04-09 A | U1000, U1010, U1020, U1030 FF, U1040, U1050, U1060, U1070, U1080, A1090 | 100% |  | 2025-03-10 | 2025-04-08 |  | 232,666 | 274,701 | 4386750u250601 |
| A1120 |  | Settlement Period - West side | 50d | 2025-04-10 A | 2025-05-30 A | A1110 FF | 100% |  | 2025-04-09 | 2025-05-28 | 7-Day Workweek |  |  | 4386750u250601 |
| A1130 |  | Install Storm Drainage 45+83 - 50+50 LT | 12d | 2025-05-05 A | 2025-05-20 A | A1090, U1030 | 100% |  | 2025-05-01 | 2025-05-16 |  | 80,916 | 80,916 | 4386750u250601 |
| A1140 |  | Install Storm Drainage NP-306, NP-307, NP-308 | 7d | 2025-05-20 A | 2025-05-28 A | A1130 | 100% |  | 2025-05-19 | 2025-05-28 |  | 60,584 | 26,584 | 4386750u250601 |
| A1180 |  | Install Storm Drainage 45+30 - 42+23 LT | 12d | 2025-05-26 A | 2025-06-09 | A1170 FF, A1110 | 35% | 6d | 2025-05-22 | 2025-06-09 |  | 78,896 | 67,189 | 4386750u250601 |
| A1150 |  | Install Storm Drainage Crossline at 49+52 | 3d | 2025-05-29 A | 2025-06-02 | A1140 | 65% | 1d |  |  |  | 13,792 | 7,842 | 4386750u250601 |
| A1160 |  | Install Storm Drainage Crossline at 48+19 | 3d | 2025-06-03 | 2025-06-05 | A1150 |  |  |  |  |  | 13,792 |  | 4386750u250601 |
| A1170 |  | Install Storm Drainage DP-400 | 2d | 2025-06-06 | 2025-06-09 | A1160 |  |  |  |  |  | 2,880 |  | 4386750u250601 |
| A1190 |  | Install Storm Drainage Crossline at 42+25 | 3d | 2025-06-10 | 2025-06-12 | A1180 |  |  |  |  |  | 5,390 |  | 4386750u250601 |
| A1200 |  | Install Storm Drainage 42+25 - 40+39 RT | 4d | 2025-06-13 | 2025-06-18 | A1190 |  |  |  |  |  | 23,792 |  | 4386750u250601 |
| A1210 |  | Install Storm Drainage Crossline at 40+39 | 4d | 2025-06-19 | 2025-06-24 | A1200 |  |  |  |  |  | 36,394 |  | 4386750u250601 |
| A1220 |  | Install Curb & Gutter 51+00 - 46+15 RT | 2d | 2025-06-25 | 2025-06-26 | A1210 |  |  |  |  |  | 15,000 |  | 4386750u250601 |
| A1230 |  | Install Curb & Gutter 45+00 - 39+85 RT | 2d | 2025-06-27 | 2025-06-30 | A1220 |  |  |  |  |  | 15,210 |  | 4386750u250601 |
| A1240 |  | Install Curb & Gutter 39+85 - 45+00 LT | 2d | 2025-07-01 | 2025-07-02 | A1230 |  |  |  |  |  | 15,240 |  | 4386750u250601 |
| A1250 |  | Install Curb & Gutter 46+15 - 51+00 LT | 2d | 2025-07-03 | 2025-07-07 | A1240 |  |  |  |  |  | 15,000 |  | 4386750u250601 |
| A1260 |  | Install Sidewalk 50+15 - 51+00 LT | 5d | 2025-07-08 | 2025-07-14 | A1250 |  |  |  |  |  | 9,195 |  | 4386750u250601 |
| A1270 |  | Fine Grading East Side | 8d | 2025-07-15 | 2025-07-24 | A1130, A1250, A1100, A1260 |  |  |  |  |  | 25,000 |  | 4386750u250601 |
| A1330 |  | Install Sidewalk at Bridge Ends | 6d | 2025-07-15 | 2025-07-22 | A1260, A1250, A1730 |  |  |  |  |  | 4,160 |  | 4386750u250601 |
| A1340 |  | Install Concrete Driveways | 6d | 2025-07-23 | 2025-07-30 | A1330 |  |  |  |  |  | 18,850 |  | 4386750u250601 |
| A1280 |  | Fine Grading West Side | 8d | 2025-07-25 | 2025-08-05 | A1270, A1240, A1120 |  |  |  |  |  | 25,000 |  | 4386750u250601 |
| A1290 |  | Install Asphalt Base Course East side | 3d | 2025-07-25 | 2025-07-29 | A1270, A1730, A1100 |  |  |  |  |  | 83,860 |  | 4386750u250601 |
| A1300 |  | Install Asphalt Binder Course East side | 3d | 2025-07-30 | 2025-08-01 | A1290 |  |  |  |  |  | 59,650 |  | 4386750u250601 |
| A1310 |  | Install Asphalt Base Course West side | 3d | 2025-08-06 | 2025-08-08 | A1300, A1120, A1280 |  |  |  |  |  | 83,860 |  | 4386750u250601 |
| A1320 |  | Install Asphalt Binder Course West side | 3d | 2025-08-11 | 2025-08-13 | A1310 |  |  |  |  |  | 59,350 |  | 4386750u250601 |

Notes:
- W1000: Expenses: Large water relocation
- W1010: Expenses: Large water relocation
- W1020: Expenses: Large water relocation
- W1030: Expenses: Large water relocation
- W1040: Expenses: Large water relocation
- W1050: Expenses: Large water relocation
- A1090: Expenses: Unclassified Excav; Borrow Excavation
- A1110: Expenses: Unclassified Excav; Borrow Excavation; 18" smooth wall pipe
- A1130: Expenses: 18" smooth wall pipe; CB Type 16
- A1140: Expenses: 18" smooth wall pipe; DI 24x36; JB 36x36; Temp Shoring
- A1180: Expenses: 18" smooth wall pipe; CB Type 16; CB Type 18; Temp Shoring; 15" smooth wall pipe
- A1150: Expenses: 18" smooth wall pipe; CB Type 16
- A1160: Expenses: 18" smooth wall pipe; CB Type 16
- A1170: Expenses: 15" smooth wall pipe
- A1190: Expenses: 18" smooth wall pipe
- A1200: Expenses: 18" smooth wall pipe; CB Type 16; Temp Shoring
- A1210: Expenses: 18" smooth wall pipe; CB Type 16; Temp Shoring
- A1220: Expenses: 1'6" Vertical Curb
- A1230: Expenses: 1'6" Vertical Curb
- A1240: Expenses: 1'6" Vertical Curb
- A1250: Expenses: 1'6" Vertical Curb
- A1260: Expenses: 4" S/W; DWS; 6" D/W; Pedestrian ramp
- A1270: Expenses: Fine Grading
- A1330: Expenses: 4" S/W
- A1340: Expenses: 6" D/W
- A1280: Expenses: Fine Grading
- A1290: Expenses: FDP - 8"; Hot Mix Asphalt Base Course - Type B; Liquid Asph Binder PG 64-22
- A1300: Expenses: Hot Mix Asphalt Interm Course C; Liquid Asphalt Binder PG64-22; Hot Mix Asphalt Interm Course B
- A1310: Expenses: Hot Mix Asphalt Base Course - Type B; Liquid Asph Binder PG 64-22; FDP - 8"
- A1320: Expenses: Liquid Asphalt Binder PG64-22; Hot Mix Asphalt Interm Course B; Hot Mix Asphalt Interm Course C

| ID | WBS | Activity | Duration | Start | Finish | Predecessors | Complete | Planned start | Planned finish | Calendar | Cost | Actual cost | Project |
| --- | --- | --- | --- | --- | --- | --- | --- | --- | --- | --- | --- | --- | --- |
|  | Grading-High | **Construct High St. Cul-de-Sac** |  | 2025-06-02 | 2025-08-14 |  |  |  |  |  |  |  |  |
| A1350 |  | Rough Grading - Cul-de-Sac | 4d | 2025-06-02 | 2025-06-05 | A1120 |  |  |  |  | 12,810 |  | 4386750u250601 |
| A1360 |  | Install GABC - Cul-de-Sac | 4d | 2025-08-06 | 2025-08-11 | A1350, A1085, A1280 |  |  |  |  | 20,625 |  | 4386750u250601 |
| A1370 |  | Fine Grading - Cul-de Sac | 3d | 2025-08-12 | 2025-08-14 | A1360 |  |  |  |  | 9,500 |  | 4386750u250601 |
|  | Bridge Construction | **Bridge Construction** |  | 2024-09-04 | 2025-06-20 |  |  |  |  |  |  |  |  |
| A1380 |  | Bridge Demolition | 8d | 2024-09-04 A | 2024-09-10 A | A1070 | 100% | 2025-01-03 | 2025-01-14 |  | 90,000 | 90,000 | 4386750u250601 |
| A1390 |  | Excavate for Gabion Basket - East Side | 2d | 2024-10-09 A | 2024-10-10 A | A1380, U1040 SS | 100% | 2025-01-03 | 2025-01-06 |  | 10,500 | 10,500 | 4386750u250601 |
| A1400 |  | Install Helical Anchors - East Side | 5d | 2024-10-14 A | 2024-10-14 A | A1390, S1020 | 100% | 2025-01-07 | 2025-01-13 |  | 71,500 | 71,500 | 4386750u250601 |
| A1410 |  | Install Rip Rap for Gabion Basket - East Side | 5d | 2024-10-14 A | 2024-10-30 A | A1400 | 100% | 2025-01-14 | 2025-01-20 |  | 52,910 | 52,910 | 4386750u250601 |
| A1420 |  | Excavate for Gabion Basket - West Side | 2d | 2024-10-22 A | 2024-10-23 A | A1390 | 100% | 2025-01-07 | 2025-01-08 |  | 10,500 | 10,500 | 4386750u250601 |
| A1430 |  | Install Helical Anchors - West Side | 5d | 2024-10-28 A | 2024-10-28 A | A1410, A1420, S1020 | 100% | 2025-01-21 | 2025-01-27 |  | 71,500 | 71,500 | 4386750u250601 |
| A1440 |  | Install Rip Rap for Gabion Basket - West Side | 5d | 2024-10-28 A | 2024-11-22 A | A1430 | 100% | 2025-01-28 | 2025-02-03 |  | 52,910 | 62,920 | 4386750u250601 |
|  | Substructure | **Substructure** |  | 2024-09-16 | 2024-12-11 |  |  |  |  |  |  |  |  |
|  | EB 1 | **End Bent 1** |  | 2024-10-09 | 2024-12-11 |  |  |  |  |  |  |  |  |
| A1450 |  | Drive H-Piles - EB 1 | 4d | 2024-10-09 A | 2024-10-18 A | A1070 | 100% | 2025-02-25 | 2025-02-28 |  | 69,624 | 66,580.08 | 4386750u250601 |
| A1460 |  | Form EB 1 Cap & Wingwalls | 6d | 2024-11-25 A | 2024-12-03 A | A1450, A1540, A1440 | 100% | 2025-03-10 | 2025-03-17 |  | 9,423.1 | 11,826.05 | 4386750u250601 |
| A1470 |  | Pour EB 1 Cap | 2d | 2024-12-04 A | 2024-12-04 A | A1460 | 100% | 2025-04-04 | 2025-04-07 |  | 32,189.6 | 32,189.6 | 4386750u250601 |
| A1480 |  | Cure EB 1 Cap | 7d | 2024-12-05 A | 2024-12-11 A | A1470 | 100% | 2025-04-08 | 2025-04-14 | 7-Day Workweek |  |  | 4386750u250601 |
| A1490 |  | Strip EB 1 Cap | 3d | 2024-12-06 A | 2024-12-09 A | A1470 | 100% | 2025-04-08 | 2025-04-10 |  |  |  | 4386750u250601 |
|  | EB 2 | **End Bent 2** |  | 2024-09-16 | 2024-11-21 |  |  |  |  |  |  |  |  |
| A1500 |  | Drive H-Piles - EB 2 | 4d | 2024-09-16 A | 2024-09-30 A | A1070 | 100% | 2025-02-14 | 2025-02-19 |  | 76,664 | 71,816.96 | 4386750u250601 |
| A1510 |  | Form EB 2 Cap & Wingwalls | 6d | 2024-10-31 A | 2024-11-12 A | A1500 | 100% | 2025-02-04 | 2025-02-11 |  | 9,423.1 | 11,050 | 4386750u250601 |
| A1520 |  | Pour EB 2 Cap | 2d | 2024-11-13 A | 2024-11-13 A | A1510 | 100% | 2024-11-11 | 2024-11-12 |  | 29,590 | 29,590 | 4386750u250601 |
| A1530 |  | Cure EB 2 Cap | 7d | 2024-11-14 A | 2024-11-21 A | A1520 | 100% | 2024-11-13 | 2024-11-19 | 7-Day Workweek |  |  | 4386750u250601 |
| A1540 |  | Strip EB 2 Cap | 3d | 2024-11-15 A | 2024-11-18 A | A1520, A1530 | 100% | 2024-11-20 | 2024-11-22 |  |  |  | 4386750u250601 |

Notes:
- A1350: Expenses: Unclassified Excav; Borrow Excavation
- A1360: Expenses: GABC
- A1370: Expenses: Fine Grading
- A1380: Expenses: R/D Existing Bridge
- A1390: Expenses: Unclassified Excavation
- A1400: Expenses: Slope Protection
- A1410: Expenses: Slope Protection
- A1420: Expenses: Unclassified Excavation
- A1430: Expenses: Slope Protection
- A1440: Expenses: Slope Protection
- A1450: Expenses: Pile Driving Set Up; Steel H Bearing piling (HP14X117)
- A1460: Expenses: Reinf Steel (Bridge)
- A1470: Expenses: Waterproofing; Conc for Structures - Class 4000
- A1500: Expenses: Pile Driving Set Up; Steel H Bearing piling (HP14X117)
- A1510: Expenses: Reinf Steel (Bridge)
- A1520: Expenses: Conc for Structures - Class 4000

| ID | WBS | Activity | Duration | Start | Finish | Predecessors | Complete | Planned start | Planned finish | Calendar | Cost | Actual cost | Project |
| --- | --- | --- | --- | --- | --- | --- | --- | --- | --- | --- | --- | --- | --- |
|  | Superstructure | **Superstructure** |  | 2024-12-10 | 2025-06-05 |  |  |  |  |  |  |  |  |
| A1550 |  | Set Girders | 4d | 2024-12-10 A | 2024-12-10 A | A1530, A1540, A1480, A1490, S1050 | 100% | 2025-04-15 | 2025-04-18 |  | 191,477 | 191,477 | 4386750u250601 |
| A1560 |  | Install Intermediate Diaphragms | 12d | 2024-12-11 A | 2024-12-12 A | A1550 | 100% | 2025-04-21 | 2025-05-06 |  |  |  | 4386750u250601 |
| A1580 |  | Form End Bent Diaphragms | 8d | 2024-12-12 A | 2025-01-13 A | A1560 | 100% | 2025-05-23 | 2025-06-04 |  |  |  | 4386750u250601 |
| A1590 |  | Install SIP Panels | 9d | 2024-12-16 A | 2024-12-20 A | A1580 SS | 100% | 2025-06-05 | 2025-06-17 |  |  |  | 4386750u250601 |
| A1600 |  | Form Overhangs - Left | 8d | 2024-12-19 A | 2024-12-30 A | A1590 SS, A1580 SS | 100% | 2025-06-18 | 2025-06-27 |  |  |  | 4386750u250601 |
| A1610 |  | Form Overhangs - Right | 8d | 2024-12-19 A | 2024-12-31 A | A1600 FF | 100% | 2025-06-30 | 2025-07-10 |  |  |  | 4386750u250601 |
| A1630 |  | Form Headers | 6d | 2025-01-13 A | 2025-01-15 A | A1620 | 100% | 2025-01-28 | 2025-02-04 |  |  |  | 4386750u250601 |
| A1620 |  | Install Deck Rebar | 10d | 2025-01-16 A | 2025-01-17 A | A1610 | 100% | 2025-01-14 | 2025-01-27 |  | 110,265.4 | 106,262.24 | 4386750u250601 |
| A1640 |  | Install Deflection Joint | 4d | 2025-01-31 A | 2025-01-31 A | A1630 | 100% | 2025-02-05 | 2025-02-10 |  |  |  | 4386750u250601 |
| A1650 |  | Set up Screed | 2d | 2025-02-05 A | 2025-02-07 A | A1640 | 100% | 2025-02-03 | 2025-02-04 |  |  |  | 4386750u250601 |
| A1660 |  | Pour Deck | 2d | 2025-02-07 A | 2025-02-07 A | A1650 | 100% | 2025-02-05 | 2025-02-06 |  | 246,180 | 246,180 | 4386750u250601 |
| A1670 |  | Cure Deck | 7d | 2025-02-07 A | 2025-02-13 A | A1660 | 100% |  |  | 7-Day Workweek |  |  | 4386750u250601 |
| A1680 |  | Wreck End Bent Diaphragms | 4d | 2025-02-13 A | 2025-02-13 A | A1660 | 100% | 2025-02-07 | 2025-02-12 |  |  |  | 4386750u250601 |
| A1690 |  | Wreck Overhangs | 4d | 2025-06-02 | 2025-06-05 | A1680 |  |  |  |  |  |  | 4386750u250601 |
|  | Approach | **Approach Slabs** |  | 2025-03-18 | 2025-06-20 |  |  |  |  |  |  |  |  |
| A1700 |  | Form Approach Slabs | 6d | 2025-03-18 A | 2025-04-22 A | A1110 FF | 100% | 2025-04-01 | 2025-04-08 |  | 33,405.8 | 32,960.91 | 4386750u250601 |
| A1710 |  | Pour Approach Slabs | 2d | 2025-05-22 A | 2025-05-22 A | A1700, A1670 | 100% | 2025-05-01 | 2025-05-02 |  | 122,760 | 122,760 | 4386750u250601 |
| A1720 |  | Curing time for Approach Slabs | 3d | 2025-05-22 A | 2025-05-27 A | A1710 | 100% | 2025-05-03 | 2025-05-05 | 7-Day Workweek |  |  | 4386750u250601 |
| A1730 |  | Wreck Approach Slabs | 5d | 2025-05-31 A | 2025-05-31 A | A1710 | 100% | 2025-05-05 | 2025-05-09 |  |  |  | 4386750u250601 |
| A1740 |  | Pour Barrier Rail | 6d | 2025-06-02 | 2025-06-09 | A1720, A1730 |  |  |  |  | 48,720 |  | 4386750u250601 |
| A1750 |  | Profilograph | 1d | 2025-06-10 | 2025-06-10 | A1740 |  |  |  |  |  |  | 4386750u250601 |
| A1760 |  | Bridge Deck Grooving | 1d | 2025-06-11 | 2025-06-11 | A1690, A1750 |  |  |  |  | 11,367 |  | 4386750u250601 |
| A1770 |  | FP & W Approach Curbs | 5d | 2025-06-12 | 2025-06-18 | A1740, A1760 |  |  |  |  |  |  | 4386750u250601 |
| A1780 |  | Clean Up and Demobilize Bridge Construction | 2d | 2025-06-19 | 2025-06-20 | A1770 |  |  |  |  |  |  | 4386750u250601 |

Notes:
- A1550: Expenses: Elastomeric Bearing; Conc. Beam (Type III)
- A1620: Expenses: Rebar
- A1660: Expenses: Concrete Class 4000
- A1690: Expenses: Waterproofing
- A1700: Expenses: 2" conduit; Rebar
- A1710: Expenses: Conc for Structures
- A1740: Expenses: Conc Bridge Barrier Parapet
- A1760: Expenses: Deck Grooving

| ID | WBS | Activity | Duration | Start | Finish | Predecessors | Complete | Planned start | Planned finish | Calendar | Cost | Project |
| --- | --- | --- | --- | --- | --- | --- | --- | --- | --- | --- | --- | --- |
|  | phase 2 | **Phase 2 - Asphalt Surface and Permanent Striping** |  | 2025-08-15 | 2025-09-03 |  |  |  |  |  |  |  |
| A1790 |  | Install Asphalt Surface Course | 4d | 2025-08-15 | 2025-08-20 | A1300, A1710, A1720, A1730, A1370, A1320 |  |  |  | Winter Asphalt | 40,500 | 4386750u250601 |
| A1800 |  | Install Guardrail | 5d | 2025-08-21 | 2025-08-27 | A1790 |  |  |  |  | 74,450 | 4386750u250601 |
| A1810 |  | Asphalt Curing time | 7d | 2025-08-21 | 2025-08-27 | A1790 |  |  |  | 7-Day Workweek |  | 4386750u250601 |
| A1820 |  | Thermoplastic Striping and Perm Traffic Signs | 4d | 2025-08-28 | 2025-09-03 | A1810 |  |  |  | Winter Thermo | 8,840.4 | 4386750u250601 |
| A1830 |  | Final Seeding and clean-up | 3d | 2025-08-28 | 2025-09-02 | A1800, A1340 |  |  |  |  | 4,022.85 | 4386750u250601 |
|  | Deleted | **Deleted Activities** |  | 2024-12-12 | 2024-12-12 |  |  |  |  |  |  |  |
| A1570 |  | Form Interior Bent Diaphragms - Deleted | 0d | 2024-12-12 A | 2024-12-12 A | M1050 SS | 100% | 2025-05-07 | 2025-05-07 |  |  | 4386750u250601 |

Notes:
- A1790: Expenses: Hot Mix Asphalt Surface E; Liquid Asphalt Binder PG64-22
- A1800: Expenses: Non-mow strip under GR; MB Trailing End Treatment; Additional Length of Posts; 12' Wide Farm Gate; Thrie Beam GR Bridge Conn; MT3 Leading End Treatment TL3; MGS2C GR Behind Curb
- A1820: Expenses: 24" White Solid 90 MIL; Perm yellow RPM's; 4" White Skips 90 MIL; 4" White Skips Epoxy; 4" Yellow Solid Epoxy; Perm clear RPM's; 4" Yellow Skips 90 MIL; Flat Sheet Type III
- A1830: Expenses: Permanent Cover
